# PROYECTO BODEGA INDUSTRIAL

How a schedule from Primavera P6 changed from version to version. A marks actual dates.

## Version 1 (data date 2026-09-07, saved 2026-06-24)

Note of the change: Reemplaza export de recursos CSV por archivo .xer descargable

| ID | WBS | Task | Duration | Start | Finish | Predecessors | Complete | Total float |
| --- | --- | --- | --- | --- | --- | --- | --- | --- |
|  | 0 | **HITOS DEL SERVICIO** |  | 2026-09-07 | 2027-03-03 |  |  |  |
| G01 |  | Inicio Gestión (LOE) | 0d | 2026-09-07 | 2026-09-07 | H00 SF |  | 1d |
| H00 |  | Inicio del Proyecto / Entrega de terreno (Contractual) | 0d | 2026-09-07 | 2026-09-07 |  |  | 0d |
| H02 |  | Permiso DOM otorgado (Contractual) | 0d | 2026-10-02 | 2026-10-02 | F118 FF |  | 111d |
| H03 |  | Acta de inicio firmada / Kick-off | 0d | 2026-10-05 | 2026-10-05 | F124 FF, H02 FF |  | 110d |
| H04 |  | Instalación de faenas terminada | 0d | 2026-10-06 | 2026-10-06 | H03 FF, F202 FF |  | 109d |
| H01 |  | Ingeniería de detalle aprobada | 0d | 2026-11-11 | 2026-11-11 | F113 FF, F105 FF, F122 FF, F123 FF, H04 FF |  | 82d |
| H05 |  | Fundaciones terminadas (Contractual) | 0d | 2026-11-27 | 2026-11-27 | F218 FF, H01 FF |  | 70d |
| H06 |  | Radier terminado | 0d | 2026-12-28 | 2026-12-28 | H05 FF, F230 FF, F233 FF, F234 FF, F243 FF |  | 48d |
| H07 |  | Estructura metálica montada (Contractual) | 0d | 2026-12-28 | 2026-12-28 | H06 FF, F320 FF, F321 FF, F322 FF |  | 48d |
| H08 |  | Cubierta y cerramientos cerrados | 0d | 2027-01-06 | 2027-01-06 | F334 FF, F327 FF, F328 FF, F332 FF, H07 FF |  | 41d |
| H09 |  | Pruebas hidráulicas CI OK | 0d | 2027-01-13 | 2027-01-13 | H08 FF, F439 FF, F431 FF, F432 FF, F433 FF |  | 36d |
| H10 |  | Instalaciones EE energizadas | 0d | 2027-01-15 | 2027-01-15 | F417 FF, F410 FF, F411 FF, F415 FF, H09 FF |  | 34d |
| H11 |  | Comisionamiento finalizado | 0d | 2027-02-02 | 2027-02-02 | H10 FF, F449 FF, F419 FF, F443 FF, F445 FF |  | 22d |
| H12 |  | Recepción DOM (Contractual) | 0d | 2027-02-25 | 2027-02-25 | F607 FF, H11 FF |  | 4d |
| G02 |  | Fin Gestión (LOE) | 0d | 2027-03-02 | 2027-03-02 | F600 FF, F601 FF, F602 FF, F603 FF, F604 FF |  | 1d |
| H13 |  | Dossier técnico entregado | 0d | 2027-03-02 | 2027-03-02 | H12 FF, F608 FF |  | 1d |
| H14 |  | Entrega final del proyecto (Contractual) | 0d | 2027-03-03 | 2027-03-03 | F609 FF, F605 FF, F606 FF, G02 FF, H13 FF |  | 0d |
|  | 1 | **FASE 1: INGENIERÍA Y PERMISOS** |  | 2026-09-07 | 2026-11-11 |  |  |  |
|  | 1 | **Estudios de Terreno** |  | 2026-09-07 | 2026-09-16 |  |  |  |
| F100 |  | Levantamiento topográfico del terreno | 3d | 2026-09-07 A | 2026-09-09 A | H00 SS | 100% |  |
| F101 |  | Estudio de mecánica de suelos (EMS) | 5d | 2026-09-09 A | 2026-09-16 | F100 |  | 6d |
|  | 2 | **Arquitectura** |  | 2026-09-09 | 2026-09-18 |  |  |  |
| F102 |  | Planos de arquitectura (plantas, cortes) | 7d | 2026-09-09 A | 2026-09-18 | F100 |  | 0d |
|  | 3 | **Ingeniería Estructural** |  | 2026-09-18 | 2026-10-14 |  |  |  |
| F103 |  | Ingeniería básica estructural | 7d | 2026-09-18 | 2026-09-29 | F102, F101 |  | 4d |
| F104 |  | Cálculo estructural galpón metálico | 6d | 2026-09-29 | 2026-10-07 | F103 |  | 4d |
| F105 |  | Memoria de cálculo fundaciones | 8d | 2026-09-29 | 2026-10-08 | F103, F101 |  | 106d |
| F106 |  | Planos de estructuras metálicas | 6d | 2026-10-07 | 2026-10-14 | F104 |  | 4d |
|  | 4 | **Ingeniería Eléctrica** |  | 2026-09-18 | 2026-09-29 |  |  |  |
| F107 |  | Planos de instalaciones eléctricas | 7d | 2026-09-18 | 2026-09-29 | F102 |  | 56d |
|  | 5 | **Ingeniería Sanitaria** |  | 2026-09-18 | 2026-09-25 |  |  |  |
| F108 |  | Planos instalaciones sanitarias | 5d | 2026-09-18 | 2026-09-25 | F102 |  | 58d |
|  | 6 | **Protección Contra Incendios** |  | 2026-09-18 | 2026-09-29 |  |  |  |
| F109 |  | Planos sistema contra incendio | 7d | 2026-09-18 | 2026-09-29 | F102 |  | 110d |
|  | 7 | **Especificaciones Técnicas** |  | 2026-09-25 | 2026-10-19 |  |  |  |
| F110 |  | Especificaciones técnicas generales | 8d | 2026-09-25 | 2026-10-07 | F108 |  | 90d |
| F112 |  | Especificaciones técnicas EESS | 8d | 2026-09-29 | 2026-10-08 | F107, F108 |  | 88d |
| F111 |  | Especificaciones técnicas estructurales | 8d | 2026-10-07 | 2026-10-19 | F104 |  | 82d |
|  | 8 | **Presupuesto y Programación** |  | 2026-10-19 | 2026-11-05 |  |  |  |
| F113 |  | Presupuesto oficial APU por partida | 7d | 2026-10-19 | 2026-10-27 | F110, F111, F112, F116, F117 |  | 82d |
| F114 |  | Programa oficial del proyecto (P6) | 7d | 2026-10-27 | 2026-11-05 | F113 |  | 82d |
|  | 9 | **Permisos y Tramitaciones** |  | 2026-09-18 | 2026-10-08 |  |  |  |
| F115 |  | Solicitud permiso de edificación DOM | 5d | 2026-09-18 | 2026-09-25 | F102 |  | 0d |
| F117 |  | Revisión planos SERNAGEOMIN | 8d | 2026-09-25 | 2026-10-07 | F108 |  | 90d |
| F118 |  | Aprobación permiso de edificación | 5d | 2026-09-25 | 2026-10-02 | F115 |  | 0d |
| F116 |  | Tramitación revisión SEC instalaciones EE | 8d | 2026-09-29 | 2026-10-08 | F107 |  | 88d |
|  | 10 | **Planes de Gestión** |  | 2026-10-02 | 2026-11-11 |  |  |  |
| F124 |  | Acta de inicio de obra (kick-off) | 1d | 2026-10-02 | 2026-10-05 | F118 |  | 0d |
| F122 |  | Protocolo de ensayos de materiales | 5d | 2026-10-19 | 2026-10-26 | F111 |  | 95d |
| F119 |  | Plan de aseguramiento de calidad (PAC) | 7d | 2026-10-27 | 2026-11-05 | F113 |  | 82d |
| F120 |  | Plan de gestión ambiental | 7d | 2026-10-27 | 2026-11-05 | F113 |  | 82d |
| F121 |  | Plan de gestión de seguridad (PGS) | 7d | 2026-10-27 | 2026-11-05 | F113 |  | 82d |
| F123 |  | Informe de línea base del proyecto | 4d | 2026-11-05 | 2026-11-11 | F114, F119, F120, F121, F109 |  | 82d |
|  | 2 | **FASE 2: OBRAS CIVILES — FUNDACIONES Y LOSA** |  | 2026-10-05 | 2027-02-02 |  |  |  |
|  | 1 | **Instalación de Faenas** |  | 2026-10-05 | 2026-10-08 |  |  |  |
| F200 |  | Instalación de faenas (bodega, casino, SSHH) | 4d | 2026-10-05 | 2026-10-08 | F124 |  | 0d |
| F201 |  | Cierre perimetral provisional de obra | 3d | 2026-10-05 | 2026-10-08 | F124 |  | 1d |
| F202 |  | Cartel de obra | 1d | 2026-10-05 | 2026-10-06 | F124 |  | 109d |
|  | 2 | **Movimiento de Tierras** |  | 2026-10-09 | 2026-10-30 |  |  |  |
| F203 |  | Desbroce y limpieza del terreno | 3d | 2026-10-09 | 2026-10-14 | F200, F201 |  | 0d |
| F204 |  | Topografía y trazado ejes de fundaciones | 1d | 2026-10-14 | 2026-10-14 | F203, F100 |  | 0d |
| F205 |  | Excavación mecánica para fundaciones | 4d | 2026-10-15 | 2026-10-20 | F204 |  | 0d |
| F206 |  | Excavación manual para correcciones | 4d | 2026-10-21 | 2026-10-26 | F205 |  | 0d |
| F207 |  | Retiro de excedentes de excavación | 4d | 2026-10-21 | 2026-10-26 | F205 |  | 15d |
| F208 |  | Relleno y compactación con material seleccionado | 4d | 2026-10-27 | 2026-10-30 | F206, F207 |  | 15d |
|  | 3 | **Fundaciones** |  | 2026-10-27 | 2026-11-19 |  |  |  |
| F209 |  | Hormigón de limpieza H-10 e=5cm | 3d | 2026-10-27 | 2026-10-29 | F206 |  | 0d |
| F210 |  | Enfierradura zapatas (kg) | 4d | 2026-10-29 | 2026-11-04 | F209 |  | 0d |
| F211 |  | Moldaje zapatas aisladas | 4d | 2026-10-29 | 2026-11-04 | F209 |  | 0d |

| ID | WBS | Task | Duration | Start | Finish | Predecessors | Total float |
| --- | --- | --- | --- | --- | --- | --- | --- |
| F212 |  | Hormigón H-30 zapatas aisladas | 3d | 2026-11-04 | 2026-11-09 | F210, F211 | 0d |
| F216 |  | Pernos de anclaje columnas (set) | 4d | 2026-11-04 | 2026-11-10 | F210, F211 | 7d |
| F213 |  | Enfierradura cadena de fundación | 4d | 2026-11-09 | 2026-11-13 | F212 | 1d |
| F214 |  | Moldaje cadena de fundación | 5d | 2026-11-09 | 2026-11-16 | F212 | 0d |
| F215 |  | Hormigón H-30 cadena de fundación | 3d | 2026-11-16 | 2026-11-19 | F213, F214 | 0d |
|  | 4 | **Anclajes y Placas Base** |  | 2026-11-19 | 2026-11-27 |  |  |
| F217 |  | Nivelación y alineación placas base | 3d | 2026-11-19 | 2026-11-24 | F215, F216 | 0d |
| F218 |  | Grouting placas base columnas | 3d | 2026-11-24 | 2026-11-27 | F217 | 0d |
|  | 5 | **Radier y Losa** |  | 2026-11-19 | 2026-12-28 |  |  |
| F219 |  | Relleno interior con ripio compactado e=20cm | 4d | 2026-11-19 | 2026-11-25 | F215, F235 | 5d |
| F220 |  | Compactación de subrasante (95% Proctor) | 4d | 2026-11-25 | 2026-12-01 | F219 | 5d |
| F221 |  | Sub-base granular e=15cm compactada | 4d | 2026-12-01 | 2026-12-07 | F220 | 5d |
| F222 |  | Enfierradura losa malla ø8@20cm | 4d | 2026-12-07 | 2026-12-10 | F221 | 5d |
| F223 |  | Moldaje perimetral losa | 3d | 2026-12-07 | 2026-12-09 | F221 | 6d |
| F224 |  | Instalación tuberías embutidas EESS antes de losa | 3d | 2026-12-07 | 2026-12-09 | F221, F108 | 6d |
| F225 |  | Instalación ductos eléctricos embutidos | 3d | 2026-12-07 | 2026-12-09 | F221, F107 | 6d |
| F226 |  | Hormigón H-30 losa e=15cm | 3d | 2026-12-10 | 2026-12-15 | F222, F223, F224, F225 | 5d |
| F227 |  | Endurecedor superficial minerálico | 3d | 2026-12-16 | 2026-12-21 | F226 | 14d |
| F228 |  | Curado de losa con membrana | 3d | 2026-12-16 | 2026-12-21 | F226 | 14d |
| F229 |  | Corte de juntas de dilatación | 3d | 2026-12-21 | 2026-12-23 | F227, F228 | 14d |
| F230 |  | Sellado de juntas con poliuretano | 3d | 2026-12-23 | 2026-12-28 | F229, F237, F238 | 14d |
|  | 6 | **Pavimentos y Obras Exteriores** |  | 2026-11-19 | 2026-12-15 |  |  |
| F234 |  | Hormigón cierre perimetral inferior (soleo) | 4d | 2026-11-19 | 2026-11-25 | F215 | 72d |
| F231 |  | Pavimento exterior acceso hormigón H-25 e=12cm | 5d | 2026-11-27 | 2026-12-03 | F218 | 41d |
| F232 |  | Bordillo hormigón prefabricado | 4d | 2026-12-04 | 2026-12-09 | F231 | 57d |
| F233 |  | Veredas peatonales H-25 | 4d | 2026-12-10 | 2026-12-15 | F232, F235 | 57d |
|  | 7 | **Obras de Drenaje** |  | 2026-11-02 | 2027-01-12 |  |  |
| F235 |  | Foso de inspección instalaciones | 4d | 2026-11-02 | 2026-11-05 | F208 | 15d |
| F236 |  | Cámara de inspección aguas lluvia | 4d | 2026-11-02 | 2026-11-05 | F208 | 45d |
| F237 |  | Canaleta aguas lluvia perimetral | 4d | 2026-11-05 | 2026-11-11 | F236 | 45d |
| F238 |  | Red de alcantarillado pluvial enterrada | 4d | 2026-11-05 | 2026-11-11 | F236 | 45d |
| F239 |  | Colector de agua lluvia (bajadas techo) | 4d | 2027-01-06 | 2027-01-12 | F326 | 36d |
|  | 8 | **Terminaciones de Piso** |  | 2027-01-15 | 2027-01-28 |  |  |
| F240 |  | Pintura suelo epóxico 2 manos demarcación | 5d | 2027-01-15 | 2027-01-22 | F339, F230 | 0d |
| F241 |  | Demarcación zonas de tránsito y almacén | 4d | 2027-01-22 | 2027-01-28 | F240 | 0d |
|  | 9 | **Ensayos y Control de Calidad** |  | 2026-12-07 | 2027-02-02 |  |  |
| F243 |  | Ensayo compactación Proctor modificado | 4d | 2026-12-07 | 2026-12-10 | F220, F221 | 60d |
| F242 |  | Ensayo compresión hormigón (serie 3 probetas) | 32d | 2026-12-21 | 2027-02-02 | F212, F215, F227 | 21d |
|  | 3 | **FASE 3: ESTRUCTURA METÁLICA Y CUBIERTA** |  | 2026-10-15 | 2027-01-15 |  |  |
|  | 1 | **Fabricación Estructura Metálica** |  | 2026-10-15 | 2026-11-13 |  |  |
| F300 |  | Fabricación columnas perfil HEB 260 | 11d | 2026-10-15 | 2026-10-29 | F106 | 4d |
| F301 |  | Fabricación vigas principales reticuladas | 11d | 2026-10-15 | 2026-10-29 | F106 | 4d |
| F302 |  | Fabricación vigas secundarias IPE 240 | 11d | 2026-10-15 | 2026-10-29 | F106 | 4d |
| F303 |  | Fabricación viguetas de cubierta | 11d | 2026-10-15 | 2026-10-29 | F106 | 4d |
| F305 |  | Fabricación tirantes y cruces de San Andrés | 9d | 2026-10-15 | 2026-10-27 | F106 | 6d |
| F304 |  | Fabricación correas de techo C200 | 11d | 2026-10-29 | 2026-11-13 | F300 | 27d |
|  | 2 | **Fabricación Portones y Accesos** |  | 2026-10-27 | 2026-11-11 |  |  |
| F306 |  | Fabricación portones ingreso 5x6m | 11d | 2026-10-27 | 2026-11-11 | F305 | 78d |
| F307 |  | Fabricación portón salida emergencia 3x4m | 11d | 2026-10-27 | 2026-11-11 | F305 | 78d |
|  | 3 | **Fabricación Plataformas y Escaleras** |  | 2026-10-27 | 2026-11-09 |  |  |
| F308 |  | Fabricación plataformas de acceso acero | 9d | 2026-10-27 | 2026-11-09 | F305 | 39d |
| F309 |  | Fabricación escaleras metálicas interiores | 9d | 2026-10-27 | 2026-11-09 | F305 | 39d |
|  | 4 | **Tratamiento Anticorrosivo y Pintura** |  | 2026-10-29 | 2026-11-18 |  |  |
| F310 |  | Granallado y pintura anticorrosiva 2 manos | 10d | 2026-10-29 | 2026-11-12 | F300, F301, F302, F303, F305 | 4d |
| F311 |  | Pintura esmalte color final RAL 7035 | 4d | 2026-11-12 | 2026-11-18 | F310 | 4d |
|  | 5 | **Logística y Transporte** |  | 2026-11-02 | 2026-11-23 |  |  |
| F313 |  | Habilitación acceso maquinaria pesada a galpón | 3d | 2026-11-02 | 2026-11-04 | F208 | 17d |
| F312 |  | Transporte de estructura a obra | 3d | 2026-11-18 | 2026-11-23 | F311 | 4d |
|  | 6 | **Montaje Estructura Principal** |  | 2026-11-27 | 2026-12-25 |  |  |
| F314 |  | Montaje columnas principales | 5d | 2026-11-27 | 2026-12-03 | F218, F312, F313 | 0d |
| F315 |  | Montaje vigas principales | 4d | 2026-12-04 | 2026-12-09 | F314 | 0d |
| F316 |  | Montaje vigas secundarias | 4d | 2026-12-10 | 2026-12-15 | F315 | 0d |
| F319 |  | Montaje tirantes y arriostramiento | 5d | 2026-12-10 | 2026-12-16 | F315 | 3d |
| F317 |  | Montaje viguetas de cubierta | 4d | 2026-12-16 | 2026-12-21 | F316 | 0d |
| F318 |  | Montaje correas de techo | 4d | 2026-12-22 | 2026-12-25 | F317, F304 | 0d |
|  | 7 | **Montaje Portones y Accesos** |  | 2026-12-04 | 2026-12-09 |  |  |
| F320 |  | Montaje portones de acceso vehicular | 4d | 2026-12-04 | 2026-12-09 | F314, F306 | 61d |
| F321 |  | Montaje puertas de emergencia | 4d | 2026-12-04 | 2026-12-09 | F314, F307 | 61d |
|  | 8 | **Montaje Plataformas y Escaleras** |  | 2026-12-16 | 2026-12-21 |  |  |
| F322 |  | Montaje plataformas y escaleras | 4d | 2026-12-16 | 2026-12-21 | F316, F309, F308 | 12d |

| ID | WBS | Task | Duration | Start | Finish | Predecessors | Total float |
| --- | --- | --- | --- | --- | --- | --- | --- |
|  | 9 | **Cubierta y Cerramientos** |  | 2026-12-16 | 2027-01-06 |  |  |
| F324 |  | Cierre lateral panel metálico e=40mm | 4d | 2026-12-16 | 2026-12-22 | F319 | 3d |
| F325 |  | Frente fachada con panel metálico | 5d | 2026-12-16 | 2026-12-23 | F319 | 6d |
| F329 |  | Instalación rejillas de ventilación cenital | 4d | 2026-12-22 | 2026-12-28 | F324 | 3d |
| F323 |  | Cubierta panel sandwich TR-5 e=50mm | 4d | 2026-12-28 | 2026-12-31 | F318, F319 | 0d |
| F326 |  | Instalación canaletas y bajadas de aguas lluvia | 4d | 2026-12-31 | 2027-01-06 | F323 | 36d |
| F327 |  | Instalación cumbreras y remates perimetrales | 4d | 2026-12-31 | 2027-01-06 | F323, F329, F333 | 41d |
| F328 |  | Instalación claraboyas translúcidas | 4d | 2026-12-31 | 2027-01-06 | F323 | 41d |
| F330 |  | Sellado de encuentros cubierta-muro | 4d | 2026-12-31 | 2027-01-06 | F323, F329 | 0d |
|  | 10 | **Aislaciones** |  | 2026-12-22 | 2027-01-06 |  |  |
| F333 |  | Aislación muros laterales e=50mm | 4d | 2026-12-22 | 2026-12-28 | F324 | 44d |
| F334 |  | Cierre inferior muro con placa fibrocemento | 4d | 2026-12-22 | 2026-12-28 | F324 | 48d |
| F331 |  | Barrera de vapor bajo cubierta | 4d | 2026-12-28 | 2026-12-31 | F318 | 41d |
| F332 |  | Aislación térmica cubierta lana mineral e=80mm | 4d | 2026-12-31 | 2027-01-06 | F323, F331 | 41d |
|  | 11 | **Ventanas y Vanos** |  | 2026-12-22 | 2026-12-29 |  |  |
| F336 |  | Instalación ventanas laterales (0.6x0.8m) | 4d | 2026-12-22 | 2026-12-28 | F324 | 7d |
| F335 |  | Instalación ventanas fachada (0.8x1.0m) | 4d | 2026-12-23 | 2026-12-29 | F325 | 6d |
|  | 12 | **Pinturas y Terminaciones** |  | 2026-12-29 | 2027-01-15 |  |  |
| F337 |  | Pintura exterior de fachadas | 4d | 2026-12-29 | 2027-01-04 | F325, F335, F336, F329 | 6d |
| F338 |  | Pintura interior galpón (vigas y columnas) | 4d | 2027-01-06 | 2027-01-12 | F330, F322 | 0d |
| F339 |  | Limpieza post montaje estructura | 3d | 2027-01-12 | 2027-01-15 | F337, F338 | 0d |
|  | 13 | **Control Calidad Estructura** |  | 2026-12-16 | 2026-12-25 |  |  |
| F340 |  | Apriete y revisión pernos de alta resistencia | 4d | 2026-12-16 | 2026-12-22 | F319 | 36d |
| F341 |  | Inspección radiográfica soldaduras críticas | 4d | 2026-12-16 | 2026-12-22 | F319 | 36d |
| F342 |  | Prueba de carga estructura (1.5x sobrecarga) | 3d | 2026-12-22 | 2026-12-25 | F340, F341 | 36d |
| F343 |  | Control dimensional post montaje | 3d | 2026-12-22 | 2026-12-25 | F340 | 36d |
|  | 14 | **Documentación As-Built** |  | 2026-12-28 | 2026-12-31 |  |  |
| F344 |  | Entrega de planos as-built estructura | 4d | 2026-12-28 | 2026-12-31 | F342, F343 | 36d |
|  | 4 | **FASE 4: INSTALACIONES (EE + SS + CI + VENT)** |  | 2026-11-02 | 2027-02-02 |  |  |
|  | 1 | **Instalaciones Eléctricas - Tableros** |  | 2026-12-16 | 2026-12-29 |  |  |
| F400 |  | Tablero general BT 400A con protecciones | 5d | 2026-12-16 | 2026-12-22 | F226 | 7d |
| F401 |  | Tablero de alumbrado y tomacorrientes | 5d | 2026-12-22 | 2026-12-29 | F400 | 7d |
| F402 |  | Tablero de fuerza motores | 5d | 2026-12-22 | 2026-12-29 | F400 | 7d |
|  | 2 | **Instalaciones Eléctricas - Canalizaciones** |  | 2026-12-04 | 2026-12-22 |  |  |
| F403 |  | Canalización conduit EMT 3" para circuito principal | 5d | 2026-12-04 | 2026-12-10 | F314 | 23d |
| F404 |  | Canalización conduit EMT 1" alumbrado | 5d | 2026-12-10 | 2026-12-16 | F315 | 14d |
| F405 |  | Canalización conduit EMT 1/2" tomacorrientes | 5d | 2026-12-16 | 2026-12-22 | F316 | 18d |
|  | 3 | **Instalaciones Eléctricas - Cableado** |  | 2026-12-16 | 2027-01-08 |  |  |
| F408 |  | Cable XLPE 3x2.5mm² alumbrado | 5d | 2026-12-16 | 2026-12-23 | F404 | 14d |
| F406 |  | Cable poder 4x16mm² (alimentador principal) | 5d | 2026-12-22 | 2026-12-29 | F403, F400 | 15d |
| F407 |  | Cable XLPE 4x6mm² circuitos secundarios | 8d | 2026-12-29 | 2027-01-08 | F401, F400, F402 | 7d |
|  | 4 | **Instalaciones Eléctricas - Iluminación** |  | 2026-12-31 | 2027-01-15 |  |  |
| F410 |  | Luminaria LED fluorescente 2x36W oficinas | 5d | 2026-12-31 | 2027-01-07 | F408, F416, F412 | 40d |
| F409 |  | Luminaria LED industrial highbay 200W UFO | 5d | 2027-01-01 | 2027-01-08 | F408, F440 | 7d |
| F411 |  | Luminaria exterior LED 150W con poste | 5d | 2027-01-08 | 2027-01-15 | F407 | 34d |
|  | 5 | **Instalaciones Eléctricas - Accesorios** |  | 2026-12-22 | 2026-12-31 |  |  |
| F412 |  | Interruptores, tomacorrientes y accesorios | 7d | 2026-12-22 | 2026-12-31 | F405 | 40d |
|  | 6 | **Instalaciones Eléctricas - Puesta a Tierra** |  | 2026-12-04 | 2026-12-17 |  |  |
| F413 |  | Sistema de puesta a tierra (red malla) | 7d | 2026-12-04 | 2026-12-15 | F314 | 23d |
| F414 |  | Medición de resistencia de tierra (<5O) | 3d | 2026-12-15 | 2026-12-17 | F413 | 23d |
|  | 7 | **Instalaciones Eléctricas - Respaldo** |  | 2026-11-04 | 2027-01-14 |  |  |
| F416 |  | Generador de emergencia 50KVA (arriendo) | 5d | 2026-11-04 | 2026-11-11 | F313 | 77d |
| F415 |  | Sistema UPS oficina administración 3KVA | 4d | 2027-01-08 | 2027-01-14 | F407 | 35d |
|  | 8 | **Instalaciones Eléctricas - Recepción SEC** |  | 2027-01-08 | 2027-01-15 |  |  |
| F417 |  | Revisión SEC y emisión informe | 5d | 2027-01-08 | 2027-01-15 | F406, F407, F408, F409, F414 | 7d |
|  | 9 | **Instalaciones Sanitarias - Agua Potable** |  | 2026-11-02 | 2026-12-22 |  |  |
| F418 |  | Red AP enterrada PVC PN10 ø63mm | 5d | 2026-11-02 | 2026-11-06 | F208 | 45d |
| F419 |  | Red AP interior PVC PN10 ø25mm | 5d | 2026-12-16 | 2026-12-22 | F226 | 52d |
|  | 10 | **Instalaciones Sanitarias - Artefactos** |  | 2027-01-04 | 2027-01-11 |  |  |
| F420 |  | Artefactos sanitarios (WC+lavamanos+urinario) | 5d | 2027-01-04 | 2027-01-11 | F427 | 12d |
| F421 |  | Instalación duchas SSHH personal | 5d | 2027-01-04 | 2027-01-11 | F427 | 12d |
|  | 11 | **Instalaciones Sanitarias - Alcantarillado** |  | 2026-11-02 | 2026-12-29 |  |  |
| F423 |  | Red alcantarillado exterior PVC ø160mm | 5d | 2026-11-02 | 2026-11-06 | F208 | 62d |
| F424 |  | Cámara de inspección aguas servidas | 4d | 2026-11-06 | 2026-11-12 | F423 | 62d |
| F425 |  | Trampa de grasas | 4d | 2026-11-06 | 2026-11-12 | F423 | 62d |
| F422 |  | Red alcantarillado interior PVC ø110mm | 7d | 2026-12-21 | 2026-12-29 | F436 | 21d |
|  | 12 | **Instalaciones Sanitarias - Gas** |  | 2027-01-04 | 2027-01-08 |  |  |
| F426 |  | Instalación calefón 10L gas licuado | 4d | 2027-01-04 | 2027-01-08 | F427 | 13d |
|  | 13 | **Construcción SSHH** |  | 2026-12-21 | 2027-01-04 |  |  |
| F427 |  | Construcción SSHH + caseta prefabricada 15m² | 11d | 2026-12-21 | 2027-01-04 | F436 | 5d |

| ID | WBS | Task | Duration | Start | Finish | Predecessors | Total float |
| --- | --- | --- | --- | --- | --- | --- | --- |
|  | 14 | **Protección Contra Incendios - Red Húmeda** |  | 2026-12-22 | 2027-01-08 |  |  |
| F428 |  | Red húmeda rociadores NFPA-13 ø63mm | 9d | 2026-12-22 | 2027-01-01 | F317 | 13d |
| F429 |  | Rociadores automáticos estándar 68°C | 5d | 2027-01-01 | 2027-01-08 | F428 | 13d |
|  | 15 | **Protección Contra Incendios - Detección** |  | 2026-12-22 | 2027-01-07 |  |  |
| F430 |  | Central de detección incendio 8 zonas | 4d | 2026-12-22 | 2026-12-28 | F405 | 18d |
| F433 |  | Pulsadores manuales de alarma | 4d | 2026-12-28 | 2027-01-01 | F430 | 44d |
| F434 |  | Sirenas estroboscópicas de alarma | 4d | 2026-12-28 | 2027-01-01 | F430 | 18d |
| F431 |  | Detectores de humo fotoeléctricos | 4d | 2027-01-01 | 2027-01-07 | F430, F440 | 40d |
| F432 |  | Detectores temperatura 58°C | 4d | 2027-01-01 | 2027-01-07 | F430, F440 | 40d |
|  | 16 | **Protección Contra Incendios - Equipos** |  | 2026-11-06 | 2027-01-07 |  |  |
| F437 |  | Estanque de reserva agua CI 20m³ | 7d | 2026-11-06 | 2026-11-17 | F418 | 45d |
| F438 |  | Grupo de presión CI motor-bomba 30HP | 7d | 2026-11-17 | 2026-11-26 | F437 | 45d |
| F436 |  | Extintores PQS 12kg ABC | 3d | 2026-12-16 | 2026-12-21 | F226 | 5d |
| F435 |  | Gabinetes contra incendio 1.5" completos | 4d | 2027-01-01 | 2027-01-07 | F428 | 14d |
|  | 17 | **Protección Contra Incendios - Pruebas** |  | 2027-01-08 | 2027-01-13 |  |  |
| F439 |  | Prueba hidráulica red CI (1.5x presión trabajo) | 3d | 2027-01-08 | 2027-01-13 | F429, F435, F438, F434, F436 | 13d |
|  | 18 | **Ventilación y Extracción** |  | 2026-12-22 | 2027-01-07 |  |  |
| F443 |  | Rejillas de admisión aire fresco fachada | 5d | 2026-12-22 | 2026-12-29 | F324 | 47d |
| F440 |  | Extractor industrial axial 15.000m³/h | 5d | 2026-12-28 | 2027-01-01 | F318 | 7d |
| F441 |  | Ventiladores de inyección 8.000m³/h | 5d | 2026-12-28 | 2027-01-01 | F318 | 17d |
| F442 |  | Ductos metálicos galvanizados ventilación | 5d | 2026-12-28 | 2027-01-01 | F318 | 40d |
| F444 |  | Control automático ventilación (termostato) | 4d | 2027-01-01 | 2027-01-07 | F441, F440 | 17d |
| F445 |  | Sistema extracción gases batería carga montacarga | 4d | 2027-01-01 | 2027-01-07 | F442, F418 | 40d |
|  | 19 | **Pruebas y Comisionamiento** |  | 2027-01-11 | 2027-01-21 |  |  |
| F447 |  | Pruebas y comisionamiento SSHH | 3d | 2027-01-11 | 2027-01-14 | F420, F421, F422, F426 | 12d |
| F446 |  | Pruebas y comisionamiento instalaciones EE | 4d | 2027-01-15 | 2027-01-21 | F417 | 7d |
|  | 20 | **Documentación As-Built** |  | 2027-01-21 | 2027-02-02 |  |  |
| F448 |  | Planos as-built instalaciones | 4d | 2027-01-21 | 2027-01-27 | F446, F447, F439, F444 | 7d |
| F449 |  | Informe final de instalaciones y ensayos | 4d | 2027-01-27 | 2027-02-02 | F448, F424, F425 | 7d |
|  | 5 | **FASE 5: EQUIPAMIENTO INTERIOR Y TERMINACIONES** |  | 2026-12-04 | 2027-02-18 |  |  |
|  | 1 | **Equipamiento de Almacenamiento** |  | 2027-01-28 | 2027-02-09 |  |  |
| F500 |  | Estantería metálica pesada 5 niveles 1000kg/niv | 5d | 2027-01-28 | 2027-02-03 | F241 | 0d |
| F502 |  | Estantería para neumáticos y partes largas | 7d | 2027-01-28 | 2027-02-08 | F241 | 3d |
| F501 |  | Estantería metálica mediana 3 niveles 500kg/niv | 5d | 2027-02-03 | 2027-02-09 | F241, F505, F507, F508, F515 | 1d |
|  | 2 | **Mobiliario Industrial** |  | 2027-01-08 | 2027-02-03 |  |  |
| F504 |  | Casilleros personal (4 puertas) | 5d | 2027-01-08 | 2027-01-15 | F520 | 14d |
| F503 |  | Mesones metálicos de trabajo 200x80cm | 5d | 2027-01-28 | 2027-02-03 | F241 | 5d |
|  | 3 | **Señalética** |  | 2027-01-04 | 2027-02-10 |  |  |
| F507 |  | Señalética de emergencia y evacuación | 5d | 2027-01-04 | 2027-01-11 | F337 | 18d |
| F505 |  | Señalética de seguridad vinilo reflectante | 5d | 2027-01-12 | 2027-01-19 | F337, F338 | 12d |
| F508 |  | Pintura de señalética piso (vías tránsito) | 4d | 2027-01-28 | 2027-02-03 | F241 | 1d |
| F506 |  | Señalética de almacenamiento y zonas | 5d | 2027-02-04 | 2027-02-10 | F500, F512, F514, F518, F504 | 0d |
|  | 4 | **Sistemas de Seguridad y CCTV** |  | 2027-01-04 | 2027-01-28 |  |  |
| F510 |  | Cámaras CCTV exterior PTZ 4K | 5d | 2027-01-04 | 2027-01-11 | F337 | 10d |
| F509 |  | Cámaras CCTV domo 4K interior | 5d | 2027-01-12 | 2027-01-19 | F338, F405 | 4d |
| F511 |  | DVR 16 canales 4K + disco 8TB | 4d | 2027-01-19 | 2027-01-25 | F509, F510 | 4d |
| F512 |  | Monitor 55" sala de control | 4d | 2027-01-25 | 2027-01-28 | F511 | 4d |
|  | 5 | **Sistemas de Control de Acceso** |  | 2026-12-04 | 2027-01-04 |  |  |
| F515 |  | Barrera vehicular automática | 4d | 2026-12-04 | 2026-12-09 | F231 | 41d |
| F513 |  | Sistema control de acceso biométrico | 5d | 2026-12-22 | 2026-12-29 | F405 | 23d |
| F514 |  | Torniquete de acceso peatonal | 4d | 2026-12-29 | 2027-01-04 | F513 | 23d |
|  | 6 | **Equipamiento de Oficina** |  | 2027-01-14 | 2027-01-28 |  |  |
| F516 |  | Mobiliario oficina bodegaje (escritorios+sillas) | 4d | 2027-01-14 | 2027-01-20 | F522 | 5d |
| F517 |  | Computadores gestión bodega (3 equipos) | 3d | 2027-01-20 | 2027-01-25 | F516, F519 | 5d |
| F518 |  | Impresora código de barras + lectores | 3d | 2027-01-25 | 2027-01-28 | F517 | 5d |
|  | 7 | **Redes y Comunicaciones** |  | 2027-01-08 | 2027-01-14 |  |  |
| F519 |  | Instalación sistema WiFi industrial | 4d | 2027-01-08 | 2027-01-14 | F407 | 9d |
|  | 8 | **Terminaciones SSHH y Oficinas** |  | 2027-01-04 | 2027-01-14 |  |  |
| F520 |  | Pintura interior muros SSHH | 4d | 2027-01-04 | 2027-01-08 | F427 | 5d |
| F521 |  | Revestimiento cerámico SSHH | 4d | 2027-01-04 | 2027-01-08 | F427 | 5d |
| F522 |  | Cielo falso planchas yeso-cartón oficinas | 4d | 2027-01-08 | 2027-01-14 | F520, F521 | 5d |
|  | 9 | **Limpieza Final y Retiros** |  | 2027-02-10 | 2027-02-18 |  |  |
| F523 |  | Limpieza general de obra | 3d | 2027-02-10 | 2027-02-15 | F506, F449, F501, F502, F503 | 0d |
| F524 |  | Retiro de instalaciones de faenas | 3d | 2027-02-16 | 2027-02-18 | F523 | 0d |
|  | 6 | **FASE 6: GESTIÓN DE PROYECTO Y CIERRE** |  | 2026-09-07 | 2027-03-03 |  |  |
|  | 1 | **Dirección y Administración de Proyecto** |  | 2026-09-07 | 2027-03-02 |  |  |
| F600 |  | Dirección de proyecto (DP) — mensual | 130d | 2026-09-07 | 2027-03-02 | H00 SS | 1d |
| F601 |  | Administración de contratos | 130d | 2026-09-07 | 2027-03-02 | H00 SS | 1d |
|  | 2 | **Aseguramiento y Control de Calidad** |  | 2026-09-07 | 2027-03-02 |  |  |
| F602 |  | Gestión de calidad (inspecciones + libros) | 130d | 2026-09-07 | 2027-03-02 | H00 SS | 1d |

| ID | WBS | Task | Duration | Start | Finish | Predecessors | Total float |
| --- | --- | --- | --- | --- | --- | --- | --- |
|  | 3 | **Prevención de Riesgos** |  | 2026-09-07 | 2027-03-02 |  |  |
| F603 |  | Prevención de riesgos en obra | 130d | 2026-09-07 | 2027-03-02 | G01 | 1d |
|  | 4 | **Reportabilidad y Coordinación** |  | 2026-09-07 | 2027-03-02 |  |  |
| F604 |  | Informes de avance mensuales al cliente | 130d | 2026-09-07 | 2027-03-02 | G01 | 1d |
| F605 |  | Reuniones de coordinación semanal | 130d | 2026-09-07 | 2027-03-02 | G01 | 1d |
|  | 5 | **Control de Costos** |  | 2026-09-07 | 2027-03-02 |  |  |
| F606 |  | Control de costos y EVM mensual | 130d | 2026-09-07 | 2027-03-02 | G01 | 1d |
|  | 6 | **Recepción y Cierre** |  | 2027-02-18 | 2027-03-03 |  |  |
| F607 |  | Tramitación recepción definitiva DOM | 5d | 2027-02-18 | 2027-02-25 | F524, F449, F344 | 0d |
| F608 |  | Entrega dossier técnico final | 3d | 2027-02-25 | 2027-03-02 | F607 | 0d |
| F609 |  | Acta de entrega y recepción conforme | 1d | 2027-03-02 | 2027-03-03 | F608, F239, F242 | 0d |

## Version 2 (data date 2026-09-07, saved 2026-06-24)

Note of the change: Agrega precios de mano de obra, materiales y maquinaria al .xer de recursos

Last finish stays 2027-03-03.

Changed:

| ID | Task | Other |
| --- | --- | --- |
| F100 | Levantamiento topográfico del terreno | resources RECURSOS JVV [200 h] → Mano de Obra [200 h] |
| F101 | Estudio de mecánica de suelos (EMS) | resources RECURSOS JVV [40 h] → Mano de Obra [40 h]; Materiales [1] |
| F102 | Planos de arquitectura (plantas, cortes) | resources RECURSOS JVV [96 h] → Mano de Obra [96 h]; Materiales [1] |
| F103 | Ingeniería básica estructural | resources RECURSOS JVV [40 h] → Mano de Obra [40 h]; Materiales [1] |
| F104 | Cálculo estructural galpón metálico | resources RECURSOS JVV [50 h] → Mano de Obra [50 h]; Materiales [1] |
| F105 | Memoria de cálculo fundaciones | resources RECURSOS JVV [20 h] → Mano de Obra [20 h]; Materiales [1] |
| F106 | Planos de estructuras metálicas | resources RECURSOS JVV [54 h] → Mano de Obra [54 h]; Materiales [1] |
| F107 | Planos de instalaciones eléctricas | resources RECURSOS JVV [32 h] → Mano de Obra [32 h]; Materiales [1] |
| F108 | Planos instalaciones sanitarias | resources RECURSOS JVV [16 h] → Mano de Obra [16 h]; Materiales [1] |
| F109 | Planos sistema contra incendio | resources RECURSOS JVV [24 h] → Mano de Obra [24 h]; Materiales [1] |
| F110 | Especificaciones técnicas generales | resources RECURSOS JVV [30 h] → Mano de Obra [30 h]; Materiales [1] |
| F112 | Especificaciones técnicas EESS | resources RECURSOS JVV [25 h] → Mano de Obra [25 h]; Materiales [1] |
| F111 | Especificaciones técnicas estructurales | resources RECURSOS JVV [35 h] → Mano de Obra [35 h]; Materiales [1] |
| F113 | Presupuesto oficial APU por partida | resources RECURSOS JVV [60 h] → Mano de Obra [60 h]; Materiales [1] |
| F114 | Programa oficial del proyecto (P6) | resources RECURSOS JVV [45 h] → Mano de Obra [45 h]; Materiales [1] |
| F115 | Solicitud permiso de edificación DOM | resources RECURSOS JVV [16 h] → Mano de Obra [16 h]; Materiales [1] |
| F117 | Revisión planos SERNAGEOMIN | resources RECURSOS JVV [16 h] → Mano de Obra [16 h]; Materiales [1] |
| F118 | Aprobación permiso de edificación | resources RECURSOS JVV [8 h] → Mano de Obra [8 h]; Materiales [1] |
| F116 | Tramitación revisión SEC instalaciones EE | resources RECURSOS JVV [20 h] → Mano de Obra [20 h]; Materiales [1] |
| F124 | Acta de inicio de obra (kick-off) | resources RECURSOS JVV [8 h] → Mano de Obra [8 h]; Materiales [1] |
| F122 | Protocolo de ensayos de materiales | resources RECURSOS JVV [12 h] → Mano de Obra [12 h]; Materiales [1] |
| F119 | Plan de aseguramiento de calidad (PAC) | resources RECURSOS JVV [24 h] → Mano de Obra [24 h]; Materiales [1] |
| F120 | Plan de gestión ambiental | resources RECURSOS JVV [20 h] → Mano de Obra [20 h]; Materiales [1] |
| F121 | Plan de gestión de seguridad (PGS) | resources RECURSOS JVV [20 h] → Mano de Obra [20 h]; Materiales [1] |
| F123 | Informe de línea base del proyecto | resources RECURSOS JVV [16 h] → Mano de Obra [16 h]; Materiales [1] |
| F200 | Instalación de faenas (bodega, casino, SSHH) | resources RECURSOS JVV [120 h] → Mano de Obra [120 h]; Materiales [1] |
| F201 | Cierre perimetral provisional de obra | resources RECURSOS JVV [54 h] → Mano de Obra [54 h]; Materiales [1] |
| F202 | Cartel de obra | resources RECURSOS JVV [10 h] → Mano de Obra [10 h]; Materiales [1] |
| F203 | Desbroce y limpieza del terreno | resources RECURSOS JVV [110 h] → Mano de Obra [110 h]; Materiales [1]; Maquinaria y Equipos [1 h] |
| F204 | Topografía y trazado ejes de fundaciones | resources RECURSOS JVV [20 h] → Mano de Obra [20 h]; Materiales [1] |
| F205 | Excavación mecánica para fundaciones | resources RECURSOS JVV [55 h] → Mano de Obra [55 h]; Materiales [1]; Maquinaria y Equipos [1 h] |
| F206 | Excavación manual para correcciones | resources RECURSOS JVV [120 h] → Mano de Obra [120 h] |
| F207 | Retiro de excedentes de excavación | resources RECURSOS JVV [32 h] → Mano de Obra [32 h]; Materiales [1]; Maquinaria y Equipos [1 h] |
| F208 | Relleno y compactación con material seleccionado | resources RECURSOS JVV [180 h] → Mano de Obra [180 h]; Materiales [1]; Maquinaria y Equipos [1 h] |
| F209 | Hormigón de limpieza H-10 e=5cm | resources RECURSOS JVV [98 h] → Mano de Obra [98 h]; Materiales [1] |
| F210 | Enfierradura zapatas (kg) | resources RECURSOS JVV [680 h] → Mano de Obra [680 h]; Materiales [1] |
| F211 | Moldaje zapatas aisladas | resources RECURSOS JVV [450 h] → Mano de Obra [450 h] |
| F212 | Hormigón H-30 zapatas aisladas | resources RECURSOS JVV [380 h] → Mano de Obra [380 h]; Materiales [1] |
| F216 | Pernos de anclaje columnas (set) | resources RECURSOS JVV [96 h] → Mano de Obra [96 h]; Materiales [1] |
| F213 | Enfierradura cadena de fundación | resources RECURSOS JVV [256 h] → Mano de Obra [256 h]; Materiales [1] |
| F214 | Moldaje cadena de fundación | resources RECURSOS JVV [800 h] → Mano de Obra [800 h] |
| F215 | Hormigón H-30 cadena de fundación | resources RECURSOS JVV [192 h] → Mano de Obra [192 h]; Materiales [1] |
| F217 | Nivelación y alineación placas base | resources RECURSOS JVV [72 h] → Mano de Obra [72 h]; Materiales [1] |
| F218 | Grouting placas base columnas | resources RECURSOS JVV [72 h] → Mano de Obra [72 h]; Materiales [1] |
| F219 | Relleno interior con ripio compactado e=20cm | resources RECURSOS JVV [384 h] → Mano de Obra [384 h]; Materiales [1]; Maquinaria y Equipos [1 h] |
| F220 | Compactación de subrasante (95% Proctor) | resources RECURSOS JVV [100 h] → Mano de Obra [100 h]; Materiales [1]; Maquinaria y Equipos [1 h] |
| F221 | Sub-base granular e=15cm compactada | resources RECURSOS JVV [180 h] → Mano de Obra [180 h]; Materiales [1]; Maquinaria y Equipos [1 h] |
| F222 | Enfierradura losa malla ø8@20cm | resources RECURSOS JVV [720 h] → Mano de Obra [720 h]; Materiales [1] |
| F223 | Moldaje perimetral losa | resources RECURSOS JVV [180 h] → Mano de Obra [180 h]; Materiales [1] |
| F224 | Instalación tuberías embutidas EESS antes de losa | resources RECURSOS JVV [40 h] → Mano de Obra [40 h]; Materiales [1]; Maquinaria y Equipos [1 h] |
| F225 | Instalación ductos eléctricos embutidos | resources RECURSOS JVV [105 h] → Mano de Obra [105 h]; Materiales [1] |
| F226 | Hormigón H-30 losa e=15cm | resources RECURSOS JVV [1050 h] → Mano de Obra [1050 h]; Materiales [1]; Maquinaria y Equipos [1 h] |
| F227 | Endurecedor superficial minerálico | resources RECURSOS JVV [200 h] → Mano de Obra [200 h]; Materiales [1]; Maquinaria y Equipos [1 h] |
| F228 | Curado de losa con membrana | resources RECURSOS JVV [100 h] → Mano de Obra [100 h]; Materiales [1] |
| F229 | Corte de juntas de dilatación | resources RECURSOS JVV [36 h] → Mano de Obra [36 h]; Materiales [1] |
| F230 | Sellado de juntas con poliuretano | resources RECURSOS JVV [45 h] → Mano de Obra [45 h]; Materiales [1] |
| F234 | Hormigón cierre perimetral inferior (soleo) | resources RECURSOS JVV [270 h] → Mano de Obra [270 h]; Materiales [1]; Maquinaria y Equipos [1 h] |
| F231 | Pavimento exterior acceso hormigón H-25 e=12cm | resources RECURSOS JVV [400 h] → Mano de Obra [400 h]; Materiales [1]; Maquinaria y Equipos [1 h] |
| F232 | Bordillo hormigón prefabricado | resources RECURSOS JVV [64 h] → Mano de Obra [64 h]; Materiales [1] |
| F233 | Veredas peatonales H-25 | resources RECURSOS JVV [120 h] → Mano de Obra [120 h]; Materiales [1]; Maquinaria y Equipos [1 h] |
| F235 | Foso de inspección instalaciones | resources RECURSOS JVV [48 h] → Mano de Obra [48 h]; Materiales [1]; Maquinaria y Equipos [1 h] |
| F236 | Cámara de inspección aguas lluvia | resources RECURSOS JVV [48 h] → Mano de Obra [48 h]; Materiales [1]; Maquinaria y Equipos [1 h] |
| F237 | Canaleta aguas lluvia perimetral | resources RECURSOS JVV [80 h] → Mano de Obra [80 h]; Materiales [1] |
| F238 | Red de alcantarillado pluvial enterrada | resources RECURSOS JVV [80 h] → Mano de Obra [80 h]; Materiales [1] |
| F239 | Colector de agua lluvia (bajadas techo) | resources RECURSOS JVV [24 h] → Mano de Obra [24 h]; Materiales [1] |
| F240 | Pintura suelo epóxico 2 manos demarcación | resources RECURSOS JVV [400 h] → Mano de Obra [400 h]; Materiales [1] |
| F241 | Demarcación zonas de tránsito y almacén | resources RECURSOS JVV [60 h] → Mano de Obra [60 h]; Materiales [1] |
| F243 | Ensayo compactación Proctor modificado | resources RECURSOS JVV [16 h] → Mano de Obra [16 h]; Materiales [1]; Maquinaria y Equipos [1 h] |
| F242 | Ensayo compresión hormigón (serie 3 probetas) | resources RECURSOS JVV [30 h] → Mano de Obra [30 h]; Materiales [1]; Maquinaria y Equipos [1 h] |
| F300 | Fabricación columnas perfil HEB 260 | resources RECURSOS JVV [768 h] → Mano de Obra [768 h]; Materiales [1] |

| ID | Task | Other |
| --- | --- | --- |
| F301 | Fabricación vigas principales reticuladas | resources RECURSOS JVV [960 h] → Mano de Obra [960 h]; Materiales [1] |
| F302 | Fabricación vigas secundarias IPE 240 | resources RECURSOS JVV [720 h] → Mano de Obra [720 h]; Materiales [1] |
| F303 | Fabricación viguetas de cubierta | resources RECURSOS JVV [720 h] → Mano de Obra [720 h]; Materiales [1] |
| F305 | Fabricación tirantes y cruces de San Andrés | resources RECURSOS JVV [250 h] → Mano de Obra [250 h]; Materiales [1] |
| F304 | Fabricación correas de techo C200 | resources RECURSOS JVV [400 h] → Mano de Obra [400 h]; Materiales [1] |
| F306 | Fabricación portones ingreso 5x6m | resources RECURSOS JVV [240 h] → Mano de Obra [240 h]; Materiales [1] |
| F307 | Fabricación portón salida emergencia 3x4m | resources RECURSOS JVV [160 h] → Mano de Obra [160 h]; Materiales [1] |
| F308 | Fabricación plataformas de acceso acero | resources RECURSOS JVV [320 h] → Mano de Obra [320 h]; Materiales [1] |
| F309 | Fabricación escaleras metálicas interiores | resources RECURSOS JVV [80 h] → Mano de Obra [80 h]; Materiales [1] |
| F310 | Granallado y pintura anticorrosiva 2 manos | resources RECURSOS JVV [680 h] → Mano de Obra [680 h]; Materiales [1]; Maquinaria y Equipos [1 h] |
| F311 | Pintura esmalte color final RAL 7035 | resources RECURSOS JVV [340 h] → Mano de Obra [340 h]; Materiales [1]; Maquinaria y Equipos [1 h] |
| F313 | Habilitación acceso maquinaria pesada a galpón | resources RECURSOS JVV [24 h] → Mano de Obra [24 h]; Materiales [1]; Maquinaria y Equipos [1 h] |
| F312 | Transporte de estructura a obra | resources RECURSOS JVV [16 h] → Mano de Obra [16 h]; Materiales [1]; Maquinaria y Equipos [1 h] |
| F314 | Montaje columnas principales | resources RECURSOS JVV [192 h] → Mano de Obra [192 h]; Materiales [1]; Maquinaria y Equipos [1 h] |
| F315 | Montaje vigas principales | resources RECURSOS JVV [96 h] → Mano de Obra [96 h]; Materiales [1]; Maquinaria y Equipos [1 h] |
| F316 | Montaje vigas secundarias | resources RECURSOS JVV [240 h] → Mano de Obra [240 h]; Materiales [1]; Maquinaria y Equipos [1 h] |
| F319 | Montaje tirantes y arriostramiento | resources RECURSOS JVV [100 h] → Mano de Obra [100 h] |
| F317 | Montaje viguetas de cubierta | resources RECURSOS JVV [240 h] → Mano de Obra [240 h]; Materiales [1]; Maquinaria y Equipos [1 h] |
| F318 | Montaje correas de techo | resources RECURSOS JVV [200 h] → Mano de Obra [200 h]; Materiales [1]; Maquinaria y Equipos [1 h] |
| F320 | Montaje portones de acceso vehicular | resources RECURSOS JVV [32 h] → Mano de Obra [32 h]; Materiales [1]; Maquinaria y Equipos [1 h] |
| F321 | Montaje puertas de emergencia | resources RECURSOS JVV [24 h] → Mano de Obra [24 h]; Materiales [1]; Maquinaria y Equipos [1 h] |
| F322 | Montaje plataformas y escaleras | resources RECURSOS JVV [48 h] → Mano de Obra [48 h]; Materiales [1]; Maquinaria y Equipos [1 h] |
| F324 | Cierre lateral panel metálico e=40mm | resources RECURSOS JVV [630 h] → Mano de Obra [630 h]; Materiales [1]; Maquinaria y Equipos [1 h] |
| F325 | Frente fachada con panel metálico | resources RECURSOS JVV [128 h] → Mano de Obra [128 h]; Materiales [1]; Maquinaria y Equipos [1 h] |
| F329 | Instalación rejillas de ventilación cenital | resources RECURSOS JVV [48 h] → Mano de Obra [48 h]; Materiales [1] |
| F323 | Cubierta panel sandwich TR-5 e=50mm | resources RECURSOS JVV [840 h] → Mano de Obra [840 h]; Materiales [1]; Maquinaria y Equipos [1 h] |
| F326 | Instalación canaletas y bajadas de aguas lluvia | resources RECURSOS JVV [48 h] → Mano de Obra [48 h]; Materiales [1] |
| F327 | Instalación cumbreras y remates perimetrales | resources RECURSOS JVV [40 h] → Mano de Obra [40 h]; Materiales [1] |
| F328 | Instalación claraboyas translúcidas | resources RECURSOS JVV [100 h] → Mano de Obra [100 h]; Materiales [1] |
| F330 | Sellado de encuentros cubierta-muro | resources RECURSOS JVV [60 h] → Mano de Obra [60 h]; Materiales [1] |
| F333 | Aislación muros laterales e=50mm | resources RECURSOS JVV [270 h] → Mano de Obra [270 h]; Materiales [1] |
| F334 | Cierre inferior muro con placa fibrocemento | resources RECURSOS JVV [90 h] → Mano de Obra [90 h]; Materiales [1] |
| F331 | Barrera de vapor bajo cubierta | resources RECURSOS JVV [210 h] → Mano de Obra [210 h]; Materiales [1] |
| F332 | Aislación térmica cubierta lana mineral e=80mm | resources RECURSOS JVV [420 h] → Mano de Obra [420 h]; Materiales [1] |
| F336 | Instalación ventanas laterales (0.6x0.8m) | resources RECURSOS JVV [40 h] → Mano de Obra [40 h]; Materiales [1] |
| F335 | Instalación ventanas fachada (0.8x1.0m) | resources RECURSOS JVV [36 h] → Mano de Obra [36 h]; Materiales [1] |
| F337 | Pintura exterior de fachadas | resources RECURSOS JVV [318 h] → Mano de Obra [318 h]; Materiales [1]; Maquinaria y Equipos [1 h] |
| F338 | Pintura interior galpón (vigas y columnas) | resources RECURSOS JVV [144 h] → Mano de Obra [144 h]; Materiales [1]; Maquinaria y Equipos [1 h] |
| F339 | Limpieza post montaje estructura | resources RECURSOS JVV [8 h] → Mano de Obra [8 h]; Materiales [1] |
| F340 | Apriete y revisión pernos de alta resistencia | resources RECURSOS JVV [48 h] → Mano de Obra [48 h]; Materiales [1] |
| F341 | Inspección radiográfica soldaduras críticas | resources RECURSOS JVV [80 h] → Mano de Obra [80 h]; Materiales [1]; Maquinaria y Equipos [1 h] |
| F342 | Prueba de carga estructura (1.5x sobrecarga) | resources RECURSOS JVV [24 h] → Mano de Obra [24 h]; Materiales [1]; Maquinaria y Equipos [1 h] |
| F343 | Control dimensional post montaje | resources RECURSOS JVV [16 h] → Mano de Obra [16 h]; Materiales [1]; Maquinaria y Equipos [1 h] |
| F344 | Entrega de planos as-built estructura | resources RECURSOS JVV [8 h] → Mano de Obra [8 h]; Materiales [1] |
| F400 | Tablero general BT 400A con protecciones | resources RECURSOS JVV [32 h] → Mano de Obra [32 h]; Materiales [1] |
| F401 | Tablero de alumbrado y tomacorrientes | resources RECURSOS JVV [48 h] → Mano de Obra [48 h]; Materiales [1] |
| F402 | Tablero de fuerza motores | resources RECURSOS JVV [24 h] → Mano de Obra [24 h]; Materiales [1] |
| F403 | Canalización conduit EMT 3" para circuito principal | resources RECURSOS JVV [40 h] → Mano de Obra [40 h]; Materiales [1] |
| F404 | Canalización conduit EMT 1" alumbrado | resources RECURSOS JVV [120 h] → Mano de Obra [120 h]; Materiales [1] |
| F405 | Canalización conduit EMT 1/2" tomacorrientes | resources RECURSOS JVV [60 h] → Mano de Obra [60 h]; Materiales [1] |
| F408 | Cable XLPE 3x2.5mm² alumbrado | resources RECURSOS JVV [120 h] → Mano de Obra [120 h]; Materiales [1] |
| F406 | Cable poder 4x16mm² (alimentador principal) | resources RECURSOS JVV [30 h] → Mano de Obra [30 h]; Materiales [1] |
| F407 | Cable XLPE 4x6mm² circuitos secundarios | resources RECURSOS JVV [120 h] → Mano de Obra [120 h]; Materiales [1] |
| F410 | Luminaria LED fluorescente 2x36W oficinas | resources RECURSOS JVV [12 h] → Mano de Obra [12 h]; Materiales [1] |
| F409 | Luminaria LED industrial highbay 200W UFO | resources RECURSOS JVV [80 h] → Mano de Obra [80 h]; Materiales [1] |
| F411 | Luminaria exterior LED 150W con poste | resources RECURSOS JVV [18 h] → Mano de Obra [18 h]; Materiales [1] |
| F412 | Interruptores, tomacorrientes y accesorios | resources RECURSOS JVV [24 h] → Mano de Obra [24 h]; Materiales [1] |
| F413 | Sistema de puesta a tierra (red malla) | resources RECURSOS JVV [40 h] → Mano de Obra [40 h]; Materiales [1] |
| F414 | Medición de resistencia de tierra (<5O) | resources RECURSOS JVV [4 h] → Mano de Obra [4 h]; Materiales [1]; Maquinaria y Equipos [1 h] |
| F416 | Generador de emergencia 50KVA (arriendo) | resources RECURSOS JVV [8 h] → Mano de Obra [8 h]; Materiales [1]; Maquinaria y Equipos [1 h] |
| F415 | Sistema UPS oficina administración 3KVA | resources RECURSOS JVV [8 h] → Mano de Obra [8 h]; Materiales [1]; Maquinaria y Equipos [1 h] |
| F417 | Revisión SEC y emisión informe | resources RECURSOS JVV [16 h] → Mano de Obra [16 h]; Materiales [1] |
| F418 | Red AP enterrada PVC PN10 ø63mm | resources RECURSOS JVV [30 h] → Mano de Obra [30 h]; Materiales [1] |
| F419 | Red AP interior PVC PN10 ø25mm | resources RECURSOS JVV [12 h] → Mano de Obra [12 h]; Materiales [1] |
| F420 | Artefactos sanitarios (WC+lavamanos+urinario) | resources RECURSOS JVV [32 h] → Mano de Obra [32 h]; Materiales [1] |
| F421 | Instalación duchas SSHH personal | resources RECURSOS JVV [24 h] → Mano de Obra [24 h]; Materiales [1] |
| F423 | Red alcantarillado exterior PVC ø160mm | resources RECURSOS JVV [48 h] → Mano de Obra [48 h]; Materiales [1] |
| F424 | Cámara de inspección aguas servidas | resources RECURSOS JVV [32 h] → Mano de Obra [32 h]; Materiales [1] |
| F425 | Trampa de grasas | resources RECURSOS JVV [8 h] → Mano de Obra [8 h]; Materiales [1] |
| F422 | Red alcantarillado interior PVC ø110mm | resources RECURSOS JVV [48 h] → Mano de Obra [48 h]; Materiales [1] |

| ID | Task | Other |
| --- | --- | --- |
| F426 | Instalación calefón 10L gas licuado | resources RECURSOS JVV [6 h] → Mano de Obra [6 h]; Materiales [1] |
| F427 | Construcción SSHH + caseta prefabricada 15m² | resources RECURSOS JVV [120 h] → Mano de Obra [120 h]; Materiales [1] |
| F428 | Red húmeda rociadores NFPA-13 ø63mm | resources RECURSOS JVV [320 h] → Mano de Obra [320 h]; Materiales [1] |
| F429 | Rociadores automáticos estándar 68°C | resources RECURSOS JVV [80 h] → Mano de Obra [80 h]; Materiales [1]; Maquinaria y Equipos [1 h] |
| F430 | Central de detección incendio 8 zonas | resources RECURSOS JVV [16 h] → Mano de Obra [16 h]; Materiales [1]; Maquinaria y Equipos [1 h] |
| F433 | Pulsadores manuales de alarma | resources RECURSOS JVV [3 h] → Mano de Obra [3 h]; Materiales [1] |
| F434 | Sirenas estroboscópicas de alarma | resources RECURSOS JVV [3 h] → Mano de Obra [3 h]; Materiales [1] |
| F431 | Detectores de humo fotoeléctricos | resources RECURSOS JVV [20 h] → Mano de Obra [20 h]; Materiales [1]; Maquinaria y Equipos [1 h] |
| F432 | Detectores temperatura 58°C | resources RECURSOS JVV [12 h] → Mano de Obra [12 h]; Materiales [1]; Maquinaria y Equipos [1 h] |
| F437 | Estanque de reserva agua CI 20m³ | resources RECURSOS JVV [24 h] → Mano de Obra [24 h]; Materiales [1] |
| F438 | Grupo de presión CI motor-bomba 30HP | resources RECURSOS JVV [16 h] → Mano de Obra [16 h]; Materiales [1]; Maquinaria y Equipos [1 h] |
| F436 | Extintores PQS 12kg ABC | resources RECURSOS JVV [10 h] → Mano de Obra [10 h]; Materiales [1] |
| F435 | Gabinetes contra incendio 1.5" completos | resources RECURSOS JVV [16 h] → Mano de Obra [16 h]; Materiales [1] |
| F439 | Prueba hidráulica red CI (1.5x presión trabajo) | resources RECURSOS JVV [8 h] → Mano de Obra [8 h]; Materiales [1]; Maquinaria y Equipos [1 h] |
| F443 | Rejillas de admisión aire fresco fachada | resources RECURSOS JVV [12 h] → Mano de Obra [12 h]; Materiales [1] |
| F440 | Extractor industrial axial 15.000m³/h | resources RECURSOS JVV [48 h] → Mano de Obra [48 h]; Materiales [1]; Maquinaria y Equipos [1 h] |
| F441 | Ventiladores de inyección 8.000m³/h | resources RECURSOS JVV [24 h] → Mano de Obra [24 h]; Materiales [1]; Maquinaria y Equipos [1 h] |
| F442 | Ductos metálicos galvanizados ventilación | resources RECURSOS JVV [120 h] → Mano de Obra [120 h]; Materiales [1] |
| F444 | Control automático ventilación (termostato) | resources RECURSOS JVV [8 h] → Mano de Obra [8 h]; Materiales [1] |
| F445 | Sistema extracción gases batería carga montacarga | resources RECURSOS JVV [16 h] → Mano de Obra [16 h]; Materiales [1] |
| F447 | Pruebas y comisionamiento SSHH | resources RECURSOS JVV [16 h] → Mano de Obra [16 h]; Materiales [1] |
| F446 | Pruebas y comisionamiento instalaciones EE | resources RECURSOS JVV [24 h] → Mano de Obra [24 h]; Materiales [1] |
| F448 | Planos as-built instalaciones | resources RECURSOS JVV [8 h] → Mano de Obra [8 h]; Materiales [1] |
| F449 | Informe final de instalaciones y ensayos | resources RECURSOS JVV [8 h] → Mano de Obra [8 h]; Materiales [1] |
| F500 | Estantería metálica pesada 5 niveles 1000kg/niv | resources RECURSOS JVV [240 h] → Mano de Obra [240 h]; Materiales [1] |
| F502 | Estantería para neumáticos y partes largas | resources RECURSOS JVV [40 h] → Mano de Obra [40 h]; Materiales [1] |
| F501 | Estantería metálica mediana 3 niveles 500kg/niv | resources RECURSOS JVV [120 h] → Mano de Obra [120 h]; Materiales [1] |
| F504 | Casilleros personal (4 puertas) | resources RECURSOS JVV [8 h] → Mano de Obra [8 h]; Materiales [1] |
| F503 | Mesones metálicos de trabajo 200x80cm | resources RECURSOS JVV [18 h] → Mano de Obra [18 h]; Materiales [1] |
| F507 | Señalética de emergencia y evacuación | resources RECURSOS JVV [6 h] → Mano de Obra [6 h]; Materiales [1] |
| F505 | Señalética de seguridad vinilo reflectante | resources RECURSOS JVV [18 h] → Mano de Obra [18 h]; Materiales [1] |
| F508 | Pintura de señalética piso (vías tránsito) | resources RECURSOS JVV [45 h] → Mano de Obra [45 h]; Materiales [1]; Maquinaria y Equipos [1 h] |
| F506 | Señalética de almacenamiento y zonas | resources RECURSOS JVV [10 h] → Mano de Obra [10 h]; Materiales [1] |
| F510 | Cámaras CCTV exterior PTZ 4K | resources RECURSOS JVV [16 h] → Mano de Obra [16 h]; Materiales [1] |
| F509 | Cámaras CCTV domo 4K interior | resources RECURSOS JVV [24 h] → Mano de Obra [24 h]; Materiales [1] |
| F511 | DVR 16 canales 4K + disco 8TB | resources RECURSOS JVV [4 h] → Mano de Obra [4 h]; Materiales [1] |
| F512 | Monitor 55" sala de control | resources RECURSOS JVV [2 h] → Mano de Obra [2 h]; Materiales [1] |
| F515 | Barrera vehicular automática | resources RECURSOS JVV [12 h] → Mano de Obra [12 h]; Materiales [1] |
| F513 | Sistema control de acceso biométrico | resources RECURSOS JVV [24 h] → Mano de Obra [24 h]; Materiales [1] |
| F514 | Torniquete de acceso peatonal | resources RECURSOS JVV [8 h] → Mano de Obra [8 h]; Materiales [1] |
| F516 | Mobiliario oficina bodegaje (escritorios+sillas) | resources RECURSOS JVV [8 h] → Mano de Obra [8 h]; Materiales [1] |
| F517 | Computadores gestión bodega (3 equipos) | resources RECURSOS JVV [10 h] → Mano de Obra [10 h]; Materiales [1] |
| F518 | Impresora código de barras + lectores | resources RECURSOS JVV [6 h] → Mano de Obra [6 h]; Materiales [1] |
| F519 | Instalación sistema WiFi industrial | resources RECURSOS JVV [12 h] → Mano de Obra [12 h]; Materiales [1] |
| F520 | Pintura interior muros SSHH | resources RECURSOS JVV [24 h] → Mano de Obra [24 h]; Materiales [1]; Maquinaria y Equipos [1 h] |
| F521 | Revestimiento cerámico SSHH | resources RECURSOS JVV [48 h] → Mano de Obra [48 h]; Materiales [1] |
| F522 | Cielo falso planchas yeso-cartón oficinas | resources RECURSOS JVV [45 h] → Mano de Obra [45 h]; Materiales [1] |
| F523 | Limpieza general de obra | resources RECURSOS JVV [24 h] → Mano de Obra [24 h]; Materiales [1] |
| F524 | Retiro de instalaciones de faenas | resources RECURSOS JVV [16 h] → Mano de Obra [16 h]; Materiales [1] |
| F600 | Dirección de proyecto (DP) — mensual | resources RECURSOS JVV [640 h] → Mano de Obra [640 h] |
| F601 | Administración de contratos | resources RECURSOS JVV [320 h] → Mano de Obra [320 h] |
| F602 | Gestión de calidad (inspecciones + libros) | resources RECURSOS JVV [320 h] → Mano de Obra [320 h] |
| F603 | Prevención de riesgos en obra | resources RECURSOS JVV [704 h] → Mano de Obra [704 h] |
| F604 | Informes de avance mensuales al cliente | resources RECURSOS JVV [32 h] → Mano de Obra [32 h]; Materiales [1] |
| F605 | Reuniones de coordinación semanal | resources RECURSOS JVV [51 h] → Mano de Obra [51 h]; Materiales [1] |
| F606 | Control de costos y EVM mensual | resources RECURSOS JVV [160 h] → Mano de Obra [160 h] |
| F607 | Tramitación recepción definitiva DOM | resources RECURSOS JVV [16 h] → Mano de Obra [16 h]; Materiales [1] |
| F608 | Entrega dossier técnico final | resources RECURSOS JVV [25 h] → Mano de Obra [25 h]; Materiales [1] |
| F609 | Acta de entrega y recepción conforme | resources RECURSOS JVV [8 h] → Mano de Obra [8 h]; Materiales [1] |

## Version 3 (data date 2026-09-07, saved 2026-06-24)

Note of the change: Reemplaza recursos del .xer por el detalle del archivo carga_de_recursos.xlsx

Last finish stays 2027-03-03.

Changed:

| ID | Task | Other |
| --- | --- | --- |
| F100 | Levantamiento topográfico del terreno | resources Mano de Obra [200 h] → Cuadrilla Topografía - Levantamiento topográfico del terreno [200 h] |
| F101 | Estudio de mecánica de suelos (EMS) | resources Mano de Obra [40 h]; Materiales [1] → Ingeniero Geotécnico - Estudio de mecánica de suelos (EMS) [40 h]; Suministro: Estudio de mecánica de suelos (EMS) [1] |
| F102 | Planos de arquitectura (plantas, cortes) | resources Mano de Obra [96 h]; Materiales [1] → Arquitecto Proyectista - Planos de arquitectura (plantas, cortes) [96 h]; Suministro: Planos de arquitectura (plantas, cortes) [1] |
| F103 | Ingeniería básica estructural | resources Mano de Obra [40 h]; Materiales [1] → Ingeniero Calculista - Ingeniería básica estructural [40 h]; Suministro: Ingeniería básica estructural [1] |
| F104 | Cálculo estructural galpón metálico | resources Mano de Obra [50 h]; Materiales [1] → Ingeniero Calculista - Cálculo estructural galpón metálico [50 h]; Suministro: Cálculo estructural galpón metálico [1] |
| F105 | Memoria de cálculo fundaciones | resources Mano de Obra [20 h]; Materiales [1] → Ingeniero Calculista - Memoria de cálculo fundaciones [20 h]; Suministro: Memoria de cálculo fundaciones [1] |
| F106 | Planos de estructuras metálicas | resources Mano de Obra [54 h]; Materiales [1] → Proyectista Estructural - Planos de estructuras metálicas [54 h]; Suministro: Planos de estructuras metálicas [1] |
| F107 | Planos de instalaciones eléctricas | resources Mano de Obra [32 h]; Materiales [1] → Proyectista Eléctrico - Planos de instalaciones eléctricas [32 h]; Suministro: Planos de instalaciones eléctricas [1] |
| F108 | Planos instalaciones sanitarias | resources Mano de Obra [16 h]; Materiales [1] → Proyectista Sanitario - Planos instalaciones sanitarias [16 h]; Suministro: Planos instalaciones sanitarias [1] |
| F109 | Planos sistema contra incendio | resources Mano de Obra [24 h]; Materiales [1] → Proyectista Protección Contra Incendio - Planos sistema contra incendio [24 h]; Suministro: Planos sistema contra incendio [1] |
| F110 | Especificaciones técnicas generales | resources Mano de Obra [30 h]; Materiales [1] → Especialista Técnico - Especificaciones técnicas generales [30 h]; Suministro: Especificaciones técnicas generales [1] |
| F112 | Especificaciones técnicas EESS | resources Mano de Obra [25 h]; Materiales [1] → Especialista Técnico - Especificaciones técnicas EESS [25 h]; Suministro: Especificaciones técnicas EESS [1] |
| F111 | Especificaciones técnicas estructurales | resources Mano de Obra [35 h]; Materiales [1] → Ingeniero Calculista - Especificaciones técnicas estructurales [35 h]; Suministro: Especificaciones técnicas estructurales [1] |
| F113 | Presupuesto oficial APU por partida | resources Mano de Obra [60 h]; Materiales [1] → Profesional de Presupuesto - Presupuesto oficial APU por partida [60 h]; Suministro: Presupuesto oficial APU por partida [1] |
| F114 | Programa oficial del proyecto (P6) | resources Mano de Obra [45 h]; Materiales [1] → Planificador (Scheduler P6) - Programa oficial del proyecto (P6) [45 h]; Suministro: Programa oficial del proyecto (P6) [1] |
| F115 | Solicitud permiso de edificación DOM | resources Mano de Obra [16 h]; Materiales [1] → Gestor de Permisos - Solicitud permiso de edificación DOM [16 h]; Suministro: Solicitud permiso de edificación DOM [1] |
| F117 | Revisión planos SERNAGEOMIN | resources Mano de Obra [16 h]; Materiales [1] → Gestor de Permisos - Revisión planos SERNAGEOMIN [16 h]; Suministro: Revisión planos SERNAGEOMIN [1] |
| F118 | Aprobación permiso de edificación | resources Mano de Obra [8 h]; Materiales [1] → Gestor de Permisos - Aprobación permiso de edificación [8 h]; Suministro: Aprobación permiso de edificación [1] |
| F116 | Tramitación revisión SEC instalaciones EE | resources Mano de Obra [20 h]; Materiales [1] → Gestor de Permisos - Tramitación revisión SEC instalaciones EE [20 h]; Suministro: Tramitación revisión SEC instalaciones EE [1] |
| F124 | Acta de inicio de obra (kick-off) | resources Mano de Obra [8 h]; Materiales [1] → Jefe de Proyecto - Acta de inicio de obra (kick-off) [8 h]; Suministro: Acta de inicio de obra (kick-off) [1] |
| F122 | Protocolo de ensayos de materiales | resources Mano de Obra [12 h]; Materiales [1] → Ingeniero de Laboratorio - Protocolo de ensayos de materiales [12 h]; Suministro: Protocolo de ensayos de materiales [1] |
| F119 | Plan de aseguramiento de calidad (PAC) | resources Mano de Obra [24 h]; Materiales [1] → Ingeniero de Calidad (QA/QC) - Plan de aseguramiento de calidad (PAC) [24 h]; Suministro: Plan de aseguramiento de calidad (PAC) [1] |
| F120 | Plan de gestión ambiental | resources Mano de Obra [20 h]; Materiales [1] → Asesor Ambiental - Plan de gestión ambiental [20 h]; Suministro: Plan de gestión ambiental [1] |
| F121 | Plan de gestión de seguridad (PGS) | resources Mano de Obra [20 h]; Materiales [1] → Experto en Prevención de Riesgos - Plan de gestión de seguridad (PGS) [20 h]; Suministro: Plan de gestión de seguridad (PGS) [1] |
| F123 | Informe de línea base del proyecto | resources Mano de Obra [16 h]; Materiales [1] → Planificador (Scheduler P6) - Informe de línea base del proyecto [16 h]; Suministro: Informe de línea base del proyecto [1] |
| F200 | Instalación de faenas (bodega, casino, SSHH) | resources Mano de Obra [120 h]; Materiales [1] → Cuadrilla Instalación de Faenas - Instalación de faenas (bodega, casino, SSHH) [120 h]; Suministro: Instalación de faenas (bodega, casino, SSHH) [1] |
| F201 | Cierre perimetral provisional de obra | resources Mano de Obra [54 h]; Materiales [1] → Cuadrilla Instalación de Faenas - Cierre perimetral provisional de obra [54 h]; Suministro: Cierre perimetral provisional de obra [1] |
| F202 | Cartel de obra | resources Mano de Obra [10 h]; Materiales [1] → Cuadrilla Instalación de Faenas - Cartel de obra [10 h]; Suministro: Cartel de obra [1] |
| F203 | Desbroce y limpieza del terreno | resources Mano de Obra [110 h]; Materiales [1]; Maquinaria y Equipos [1 h] → Cuadrilla Movimiento de Tierras - Desbroce y limpieza del terreno [110 h]; Suministro: Desbroce y limpieza del terreno [1]; Bulldozer / Retroexcavadora - Desbroce y limpieza del terreno [1 h] |
| F204 | Topografía y trazado ejes de fundaciones | resources Mano de Obra [20 h]; Materiales [1] → Cuadrilla Topografía - Topografía y trazado ejes de fundaciones [20 h]; Suministro: Topografía y trazado ejes de fundaciones [1] |
| F205 | Excavación mecánica para fundaciones | resources Mano de Obra [55 h]; Materiales [1]; Maquinaria y Equipos [1 h] → Cuadrilla Movimiento de Tierras - Excavación mecánica para fundaciones [55 h]; Suministro: Excavación mecánica para fundaciones [1]; Retroexcavadora - Excavación mecánica para fundaciones [1 h] |
| F206 | Excavación manual para correcciones | resources Mano de Obra [120 h] → Cuadrilla Movimiento de Tierras - Excavación manual para correcciones [120 h] |
| F207 | Retiro de excedentes de excavación | resources Mano de Obra [32 h]; Materiales [1]; Maquinaria y Equipos [1 h] → Cuadrilla Movimiento de Tierras - Retiro de excedentes de excavación [32 h]; Suministro: Retiro de excedentes de excavación [1]; Retroexcavadora - Retiro de excedentes de excavación [1 h] |
| F208 | Relleno y compactación con material seleccionado | resources Mano de Obra [180 h]; Materiales [1]; Maquinaria y Equipos [1 h] → Cuadrilla Movimiento de Tierras - Relleno y compactación con material seleccionado [180 h]; Suministro: Relleno y compactación con material seleccionado [1]; Rodillo / Placa compactadora - Relleno y compactación con material seleccionado [1 h] |
| F209 | Hormigón de limpieza H-10 e=5cm | resources Mano de Obra [98 h]; Materiales [1] → Cuadrilla Hormigonado (Concretero) - Hormigón de limpieza H-10 e=5cm [98 h]; Suministro: Hormigón de limpieza H-10 e=5cm [1] |
| F210 | Enfierradura zapatas (kg) | resources Mano de Obra [680 h]; Materiales [1] → Maestro Enfierrador - Enfierradura zapatas (kg) [680 h]; Suministro: Enfierradura zapatas (kg) [1] |
| F211 | Moldaje zapatas aisladas | resources Mano de Obra [450 h] → Carpintero de Obra (Moldajes) - Moldaje zapatas aisladas [450 h] |
| F212 | Hormigón H-30 zapatas aisladas | resources Mano de Obra [380 h]; Materiales [1] → Cuadrilla Hormigonado (Concretero) - Hormigón H-30 zapatas aisladas [380 h]; Suministro: Hormigón H-30 zapatas aisladas [1] |
| F216 | Pernos de anclaje columnas (set) | resources Mano de Obra [96 h]; Materiales [1] → Maestro Montajista - Pernos de anclaje columnas (set) [96 h]; Suministro: Pernos de anclaje columnas (set) [1] |
| F213 | Enfierradura cadena de fundación | resources Mano de Obra [256 h]; Materiales [1] → Maestro Enfierrador - Enfierradura cadena de fundación [256 h]; Suministro: Enfierradura cadena de fundación [1] |
| F214 | Moldaje cadena de fundación | resources Mano de Obra [800 h] → Carpintero de Obra (Moldajes) - Moldaje cadena de fundación [800 h] |
| F215 | Hormigón H-30 cadena de fundación | resources Mano de Obra [192 h]; Materiales [1] → Cuadrilla Hormigonado (Concretero) - Hormigón H-30 cadena de fundación [192 h]; Suministro: Hormigón H-30 cadena de fundación [1] |
| F217 | Nivelación y alineación placas base | resources Mano de Obra [72 h]; Materiales [1] → Maestro Montajista - Nivelación y alineación placas base [72 h]; Suministro: Nivelación y alineación placas base [1] |
| F218 | Grouting placas base columnas | resources Mano de Obra [72 h]; Materiales [1] → Maestro Montajista - Grouting placas base columnas [72 h]; Suministro: Grouting placas base columnas [1] |
| F219 | Relleno interior con ripio compactado e=20cm | resources Mano de Obra [384 h]; Materiales [1]; Maquinaria y Equipos [1 h] → Cuadrilla Movimiento de Tierras - Relleno interior con ripio compactado e=20cm [384 h]; Suministro: Relleno interior con ripio compactado e=20cm [1]; Rodillo / Placa compactadora - Relleno interior con ripio compactado e=20cm [1 h] |
| F220 | Compactación de subrasante (95% Proctor) | resources Mano de Obra [100 h]; Materiales [1]; Maquinaria y Equipos [1 h] → Cuadrilla Movimiento de Tierras - Compactación de subrasante (95% Proctor) [100 h]; Suministro: Compactación de subrasante (95% Proctor) [1]; Rodillo / Placa compactadora - Compactación de subrasante (95% Proctor) [1 h] |
| F221 | Sub-base granular e=15cm compactada | resources Mano de Obra [180 h]; Materiales [1]; Maquinaria y Equipos [1 h] → Cuadrilla Movimiento de Tierras - Sub-base granular e=15cm compactada [180 h]; Suministro: Sub-base granular e=15cm compactada [1]; Rodillo / Placa compactadora - Sub-base granular e=15cm compactada [1 h] |
| F222 | Enfierradura losa malla ø8@20cm | resources Mano de Obra [720 h]; Materiales [1] → Maestro Enfierrador - Enfierradura losa malla ø8@20cm [720 h]; Suministro: Enfierradura losa malla ø8@20cm [1] |
| F223 | Moldaje perimetral losa | resources Mano de Obra [180 h]; Materiales [1] → Carpintero de Obra (Moldajes) - Moldaje perimetral losa [180 h]; Suministro: Moldaje perimetral losa [1] |
| F224 | Instalación tuberías embutidas EESS antes de losa | resources Mano de Obra [40 h]; Materiales [1]; Maquinaria y Equipos [1 h] → Instalador Sanitario (EESS) - Instalación tuberías embutidas EESS antes de losa [40 h]; Suministro: Instalación tuberías embutidas EESS antes de losa [1]; Camión hormigonera + regla vibratoria - Instalación tuberías embutidas EESS antes de losa [1 h] |
| F225 | Instalación ductos eléctricos embutidos | resources Mano de Obra [105 h]; Materiales [1] → Instalador Eléctrico (EE) - Instalación ductos eléctricos embutidos [105 h]; Suministro: Instalación ductos eléctricos embutidos [1] |
| F226 | Hormigón H-30 losa e=15cm | resources Mano de Obra [1050 h]; Materiales [1]; Maquinaria y Equipos [1 h] → Cuadrilla Hormigonado (Concretero) - Hormigón H-30 losa e=15cm [1050 h]; Suministro: Hormigón H-30 losa e=15cm [1]; Camión hormigonera + regla vibratoria - Hormigón H-30 losa e=15cm [1 h] |
| F227 | Endurecedor superficial minerálico | resources Mano de Obra [200 h]; Materiales [1]; Maquinaria y Equipos [1 h] → Cuadrilla Terminaciones de Losa - Endurecedor superficial minerálico [200 h]; Suministro: Endurecedor superficial minerálico [1]; Equipo de pulido (helicóptero) - Endurecedor superficial minerálico [1 h] |
| F228 | Curado de losa con membrana | resources Mano de Obra [100 h]; Materiales [1] → Cuadrilla Terminaciones de Losa - Curado de losa con membrana [100 h]; Suministro: Curado de losa con membrana [1] |
| F229 | Corte de juntas de dilatación | resources Mano de Obra [36 h]; Materiales [1] → Cuadrilla Terminaciones de Losa - Corte de juntas de dilatación [36 h]; Suministro: Corte de juntas de dilatación [1] |
| F230 | Sellado de juntas con poliuretano | resources Mano de Obra [45 h]; Materiales [1] → Cuadrilla Terminaciones de Losa - Sellado de juntas con poliuretano [45 h]; Suministro: Sellado de juntas con poliuretano [1] |
| F234 | Hormigón cierre perimetral inferior (soleo) | resources Mano de Obra [270 h]; Materiales [1]; Maquinaria y Equipos [1 h] → Cuadrilla Hormigonado (Concretero) - Hormigón cierre perimetral inferior (soleo) [270 h]; Suministro: Hormigón cierre perimetral inferior (soleo) [1]; Camión hormigonera + vibrador - Hormigón cierre perimetral inferior (soleo) [1 h] |
| F231 | Pavimento exterior acceso hormigón H-25 e=12cm | resources Mano de Obra [400 h]; Materiales [1]; Maquinaria y Equipos [1 h] → Cuadrilla Hormigonado (Concretero) - Pavimento exterior acceso hormigón H-25 e=12cm [400 h]; Suministro: Pavimento exterior acceso hormigón H-25 e=12cm [1]; Camión hormigonera + vibrador - Pavimento exterior acceso hormigón H-25 e=12cm [1 h] |
| F232 | Bordillo hormigón prefabricado | resources Mano de Obra [64 h]; Materiales [1] → Cuadrilla Hormigonado (Concretero) - Bordillo hormigón prefabricado [64 h]; Suministro: Bordillo hormigón prefabricado [1] |
| F233 | Veredas peatonales H-25 | resources Mano de Obra [120 h]; Materiales [1]; Maquinaria y Equipos [1 h] → Cuadrilla Hormigonado (Concretero) - Veredas peatonales H-25 [120 h]; Suministro: Veredas peatonales H-25 [1]; Camión hormigonera + vibrador - Veredas peatonales H-25 [1 h] |
| F235 | Foso de inspección instalaciones | resources Mano de Obra [48 h]; Materiales [1]; Maquinaria y Equipos [1 h] → Maestro Sanitario / Obras - Foso de inspección instalaciones [48 h]; Suministro: Foso de inspección instalaciones [1]; Retroexcavadora menor - Foso de inspección instalaciones [1 h] |
| F236 | Cámara de inspección aguas lluvia | resources Mano de Obra [48 h]; Materiales [1]; Maquinaria y Equipos [1 h] → Maestro Sanitario / Obras - Cámara de inspección aguas lluvia [48 h]; Suministro: Cámara de inspección aguas lluvia [1]; Retroexcavadora menor - Cámara de inspección aguas lluvia [1 h] |
| F237 | Canaleta aguas lluvia perimetral | resources Mano de Obra [80 h]; Materiales [1] → Maestro Sanitario / Obras - Canaleta aguas lluvia perimetral [80 h]; Suministro: Canaleta aguas lluvia perimetral [1] |
| F238 | Red de alcantarillado pluvial enterrada | resources Mano de Obra [80 h]; Materiales [1] → Maestro Sanitario / Obras - Red de alcantarillado pluvial enterrada [80 h]; Suministro: Red de alcantarillado pluvial enterrada [1] |
| F239 | Colector de agua lluvia (bajadas techo) | resources Mano de Obra [24 h]; Materiales [1] → Maestro Sanitario / Obras - Colector de agua lluvia (bajadas techo) [24 h]; Suministro: Colector de agua lluvia (bajadas techo) [1] |
| F240 | Pintura suelo epóxico 2 manos demarcación | resources Mano de Obra [400 h]; Materiales [1] → Pintor Industrial (Epóxico) - Pintura suelo epóxico 2 manos demarcación [400 h]; Suministro: Pintura suelo epóxico 2 manos demarcación [1] |
| F241 | Demarcación zonas de tránsito y almacén | resources Mano de Obra [60 h]; Materiales [1] → Pintor Industrial (Epóxico) - Demarcación zonas de tránsito y almacén [60 h]; Suministro: Demarcación zonas de tránsito y almacén [1] |
| F243 | Ensayo compactación Proctor modificado | resources Mano de Obra [16 h]; Materiales [1]; Maquinaria y Equipos [1 h] → Cuadrilla Movimiento de Tierras - Ensayo compactación Proctor modificado [16 h]; Suministro: Ensayo compactación Proctor modificado [1]; Rodillo / Placa compactadora - Ensayo compactación Proctor modificado [1 h] |
| F242 | Ensayo compresión hormigón (serie 3 probetas) | resources Mano de Obra [30 h]; Materiales [1]; Maquinaria y Equipos [1 h] → Cuadrilla Hormigonado (Concretero) - Ensayo compresión hormigón (serie 3 probetas) [30 h]; Suministro: Ensayo compresión hormigón (serie 3 probetas) [1]; Camión hormigonera + vibrador - Ensayo compresión hormigón (serie 3 probetas) [1 h] |
| F300 | Fabricación columnas perfil HEB 260 | resources Mano de Obra [768 h]; Materiales [1] → Maestro Estructurero (Taller) - Fabricación columnas perfil HEB 260 [768 h]; Suministro: Fabricación columnas perfil HEB 260 [1] |

| ID | Task | Other |
| --- | --- | --- |
| F301 | Fabricación vigas principales reticuladas | resources Mano de Obra [960 h]; Materiales [1] → Maestro Estructurero (Taller) - Fabricación vigas principales reticuladas [960 h]; Suministro: Fabricación vigas principales reticuladas [1] |
| F302 | Fabricación vigas secundarias IPE 240 | resources Mano de Obra [720 h]; Materiales [1] → Maestro Estructurero (Taller) - Fabricación vigas secundarias IPE 240 [720 h]; Suministro: Fabricación vigas secundarias IPE 240 [1] |
| F303 | Fabricación viguetas de cubierta | resources Mano de Obra [720 h]; Materiales [1] → Maestro Estructurero (Taller) - Fabricación viguetas de cubierta [720 h]; Suministro: Fabricación viguetas de cubierta [1] |
| F305 | Fabricación tirantes y cruces de San Andrés | resources Mano de Obra [250 h]; Materiales [1] → Maestro Estructurero (Taller) - Fabricación tirantes y cruces de San Andrés [250 h]; Suministro: Fabricación tirantes y cruces de San Andrés [1] |
| F304 | Fabricación correas de techo C200 | resources Mano de Obra [400 h]; Materiales [1] → Maestro Estructurero (Taller) - Fabricación correas de techo C200 [400 h]; Suministro: Fabricación correas de techo C200 [1] |
| F306 | Fabricación portones ingreso 5x6m | resources Mano de Obra [240 h]; Materiales [1] → Maestro Estructurero (Taller) - Fabricación portones ingreso 5x6m [240 h]; Suministro: Fabricación portones ingreso 5x6m [1] |
| F307 | Fabricación portón salida emergencia 3x4m | resources Mano de Obra [160 h]; Materiales [1] → Maestro Estructurero (Taller) - Fabricación portón salida emergencia 3x4m [160 h]; Suministro: Fabricación portón salida emergencia 3x4m [1] |
| F308 | Fabricación plataformas de acceso acero | resources Mano de Obra [320 h]; Materiales [1] → Maestro Estructurero (Taller) - Fabricación plataformas de acceso acero [320 h]; Suministro: Fabricación plataformas de acceso acero [1] |
| F309 | Fabricación escaleras metálicas interiores | resources Mano de Obra [80 h]; Materiales [1] → Maestro Estructurero (Taller) - Fabricación escaleras metálicas interiores [80 h]; Suministro: Fabricación escaleras metálicas interiores [1] |
| F310 | Granallado y pintura anticorrosiva 2 manos | resources Mano de Obra [680 h]; Materiales [1]; Maquinaria y Equipos [1 h] → Pintor Industrial (Anticorrosivo) - Granallado y pintura anticorrosiva 2 manos [680 h]; Suministro: Granallado y pintura anticorrosiva 2 manos [1]; Equipo de granallado + compresor - Granallado y pintura anticorrosiva 2 manos [1 h] |
| F311 | Pintura esmalte color final RAL 7035 | resources Mano de Obra [340 h]; Materiales [1]; Maquinaria y Equipos [1 h] → Pintor Industrial - Pintura esmalte color final RAL 7035 [340 h]; Suministro: Pintura esmalte color final RAL 7035 [1]; Equipo airless + andamios - Pintura esmalte color final RAL 7035 [1 h] |
| F313 | Habilitación acceso maquinaria pesada a galpón | resources Mano de Obra [24 h]; Materiales [1]; Maquinaria y Equipos [1 h] → Operador de Maquinaria - Habilitación acceso maquinaria pesada a galpón [24 h]; Suministro: Habilitación acceso maquinaria pesada a galpón [1]; Maquinaria movimiento de tierra - Habilitación acceso maquinaria pesada a galpón [1 h] |
| F312 | Transporte de estructura a obra | resources Mano de Obra [16 h]; Materiales [1]; Maquinaria y Equipos [1 h] → Cuadrilla de Transporte/Carga - Transporte de estructura a obra [16 h]; Suministro: Transporte de estructura a obra [1]; Camión cama baja - Transporte de estructura a obra [1 h] |
| F314 | Montaje columnas principales | resources Mano de Obra [192 h]; Materiales [1]; Maquinaria y Equipos [1 h] → Cuadrilla de Montaje (Rigger) - Montaje columnas principales [192 h]; Suministro: Montaje columnas principales [1]; Camión grúa / grúa móvil - Montaje columnas principales [1 h] |
| F315 | Montaje vigas principales | resources Mano de Obra [96 h]; Materiales [1]; Maquinaria y Equipos [1 h] → Cuadrilla de Montaje (Rigger) - Montaje vigas principales [96 h]; Suministro: Montaje vigas principales [1]; Camión grúa / grúa móvil - Montaje vigas principales [1 h] |
| F316 | Montaje vigas secundarias | resources Mano de Obra [240 h]; Materiales [1]; Maquinaria y Equipos [1 h] → Cuadrilla de Montaje (Rigger) - Montaje vigas secundarias [240 h]; Suministro: Montaje vigas secundarias [1]; Camión grúa / grúa móvil - Montaje vigas secundarias [1 h] |
| F319 | Montaje tirantes y arriostramiento | resources Mano de Obra [100 h] → Cuadrilla de Montaje (Rigger) - Montaje tirantes y arriostramiento [100 h] |
| F317 | Montaje viguetas de cubierta | resources Mano de Obra [240 h]; Materiales [1]; Maquinaria y Equipos [1 h] → Cuadrilla de Montaje (Rigger) - Montaje viguetas de cubierta [240 h]; Suministro: Montaje viguetas de cubierta [1]; Camión grúa / grúa móvil - Montaje viguetas de cubierta [1 h] |
| F318 | Montaje correas de techo | resources Mano de Obra [200 h]; Materiales [1]; Maquinaria y Equipos [1 h] → Cuadrilla de Montaje (Rigger) - Montaje correas de techo [200 h]; Suministro: Montaje correas de techo [1]; Camión grúa / grúa móvil - Montaje correas de techo [1 h] |
| F320 | Montaje portones de acceso vehicular | resources Mano de Obra [32 h]; Materiales [1]; Maquinaria y Equipos [1 h] → Cuadrilla de Montaje (Rigger) - Montaje portones de acceso vehicular [32 h]; Suministro: Montaje portones de acceso vehicular [1]; Camión grúa / grúa móvil - Montaje portones de acceso vehicular [1 h] |
| F321 | Montaje puertas de emergencia | resources Mano de Obra [24 h]; Materiales [1]; Maquinaria y Equipos [1 h] → Cuadrilla de Montaje (Rigger) - Montaje puertas de emergencia [24 h]; Suministro: Montaje puertas de emergencia [1]; Camión grúa / grúa móvil - Montaje puertas de emergencia [1 h] |
| F322 | Montaje plataformas y escaleras | resources Mano de Obra [48 h]; Materiales [1]; Maquinaria y Equipos [1 h] → Cuadrilla de Montaje (Rigger) - Montaje plataformas y escaleras [48 h]; Suministro: Montaje plataformas y escaleras [1]; Camión grúa / grúa móvil - Montaje plataformas y escaleras [1 h] |
| F324 | Cierre lateral panel metálico e=40mm | resources Mano de Obra [630 h]; Materiales [1]; Maquinaria y Equipos [1 h] → Cuadrilla Cubierta y Cerramientos - Cierre lateral panel metálico e=40mm [630 h]; Suministro: Cierre lateral panel metálico e=40mm [1]; Plataforma elevadora (manlift) - Cierre lateral panel metálico e=40mm [1 h] |
| F325 | Frente fachada con panel metálico | resources Mano de Obra [128 h]; Materiales [1]; Maquinaria y Equipos [1 h] → Cuadrilla Cubierta y Cerramientos - Frente fachada con panel metálico [128 h]; Suministro: Frente fachada con panel metálico [1]; Plataforma elevadora (manlift) - Frente fachada con panel metálico [1 h] |
| F329 | Instalación rejillas de ventilación cenital | resources Mano de Obra [48 h]; Materiales [1] → Cuadrilla Cubierta y Cerramientos - Instalación rejillas de ventilación cenital [48 h]; Suministro: Instalación rejillas de ventilación cenital [1] |
| F323 | Cubierta panel sandwich TR-5 e=50mm | resources Mano de Obra [840 h]; Materiales [1]; Maquinaria y Equipos [1 h] → Cuadrilla Cubierta y Cerramientos - Cubierta panel sandwich TR-5 e=50mm [840 h]; Suministro: Cubierta panel sandwich TR-5 e=50mm [1]; Plataforma elevadora (manlift) - Cubierta panel sandwich TR-5 e=50mm [1 h] |
| F326 | Instalación canaletas y bajadas de aguas lluvia | resources Mano de Obra [48 h]; Materiales [1] → Cuadrilla Cubierta y Cerramientos - Instalación canaletas y bajadas de aguas lluvia [48 h]; Suministro: Instalación canaletas y bajadas de aguas lluvia [1] |
| F327 | Instalación cumbreras y remates perimetrales | resources Mano de Obra [40 h]; Materiales [1] → Cuadrilla Cubierta y Cerramientos - Instalación cumbreras y remates perimetrales [40 h]; Suministro: Instalación cumbreras y remates perimetrales [1] |
| F328 | Instalación claraboyas translúcidas | resources Mano de Obra [100 h]; Materiales [1] → Cuadrilla Cubierta y Cerramientos - Instalación claraboyas translúcidas [100 h]; Suministro: Instalación claraboyas translúcidas [1] |
| F330 | Sellado de encuentros cubierta-muro | resources Mano de Obra [60 h]; Materiales [1] → Cuadrilla Cubierta y Cerramientos - Sellado de encuentros cubierta-muro [60 h]; Suministro: Sellado de encuentros cubierta-muro [1] |
| F333 | Aislación muros laterales e=50mm | resources Mano de Obra [270 h]; Materiales [1] → Cuadrilla Aislación - Aislación muros laterales e=50mm [270 h]; Suministro: Aislación muros laterales e=50mm [1] |
| F334 | Cierre inferior muro con placa fibrocemento | resources Mano de Obra [90 h]; Materiales [1] → Cuadrilla Cubierta y Cerramientos - Cierre inferior muro con placa fibrocemento [90 h]; Suministro: Cierre inferior muro con placa fibrocemento [1] |
| F331 | Barrera de vapor bajo cubierta | resources Mano de Obra [210 h]; Materiales [1] → Cuadrilla Cubierta y Cerramientos - Barrera de vapor bajo cubierta [210 h]; Suministro: Barrera de vapor bajo cubierta [1] |
| F332 | Aislación térmica cubierta lana mineral e=80mm | resources Mano de Obra [420 h]; Materiales [1] → Cuadrilla Cubierta y Cerramientos - Aislación térmica cubierta lana mineral e=80mm [420 h]; Suministro: Aislación térmica cubierta lana mineral e=80mm [1] |
| F336 | Instalación ventanas laterales (0.6x0.8m) | resources Mano de Obra [40 h]; Materiales [1] → Cuadrilla Cubierta y Cerramientos - Instalación ventanas laterales (0.6x0.8m) [40 h]; Suministro: Instalación ventanas laterales (0.6x0.8m) [1] |
| F335 | Instalación ventanas fachada (0.8x1.0m) | resources Mano de Obra [36 h]; Materiales [1] → Cuadrilla Cubierta y Cerramientos - Instalación ventanas fachada (0.8x1.0m) [36 h]; Suministro: Instalación ventanas fachada (0.8x1.0m) [1] |
| F337 | Pintura exterior de fachadas | resources Mano de Obra [318 h]; Materiales [1]; Maquinaria y Equipos [1 h] → Pintor Industrial - Pintura exterior de fachadas [318 h]; Suministro: Pintura exterior de fachadas [1]; Equipo airless + andamios - Pintura exterior de fachadas [1 h] |
| F338 | Pintura interior galpón (vigas y columnas) | resources Mano de Obra [144 h]; Materiales [1]; Maquinaria y Equipos [1 h] → Pintor Industrial - Pintura interior galpón (vigas y columnas) [144 h]; Suministro: Pintura interior galpón (vigas y columnas) [1]; Equipo airless + andamios - Pintura interior galpón (vigas y columnas) [1 h] |
| F339 | Limpieza post montaje estructura | resources Mano de Obra [8 h]; Materiales [1] → Cuadrilla de Aseo - Limpieza post montaje estructura [8 h]; Suministro: Limpieza post montaje estructura [1] |
| F340 | Apriete y revisión pernos de alta resistencia | resources Mano de Obra [48 h]; Materiales [1] → Inspector QA/QC Estructuras - Apriete y revisión pernos de alta resistencia [48 h]; Suministro: Apriete y revisión pernos de alta resistencia [1] |
| F341 | Inspección radiográfica soldaduras críticas | resources Mano de Obra [80 h]; Materiales [1]; Maquinaria y Equipos [1 h] → Inspector QA/QC Estructuras - Inspección radiográfica soldaduras críticas [80 h]; Suministro: Inspección radiográfica soldaduras críticas [1]; Equipo de gammagrafía industrial - Inspección radiográfica soldaduras críticas [1 h] |
| F342 | Prueba de carga estructura (1.5x sobrecarga) | resources Mano de Obra [24 h]; Materiales [1]; Maquinaria y Equipos [1 h] → Inspector QA/QC Estructuras - Prueba de carga estructura (1.5x sobrecarga) [24 h]; Suministro: Prueba de carga estructura (1.5x sobrecarga) [1]; Instrumental de medición/topografía - Prueba de carga estructura (1.5x sobrecarga) [1 h] |
| F343 | Control dimensional post montaje | resources Mano de Obra [16 h]; Materiales [1]; Maquinaria y Equipos [1 h] → Cuadrilla de Montaje (Rigger) - Control dimensional post montaje [16 h]; Suministro: Control dimensional post montaje [1]; Camión grúa / grúa móvil - Control dimensional post montaje [1 h] |
| F344 | Entrega de planos as-built estructura | resources Mano de Obra [8 h]; Materiales [1] → Proyectista (As-Built) - Entrega de planos as-built estructura [8 h]; Suministro: Entrega de planos as-built estructura [1] |
| F400 | Tablero general BT 400A con protecciones | resources Mano de Obra [32 h]; Materiales [1] → Maestro Eléctrico - Tablero general BT 400A con protecciones [32 h]; Suministro: Tablero general BT 400A con protecciones [1] |
| F401 | Tablero de alumbrado y tomacorrientes | resources Mano de Obra [48 h]; Materiales [1] → Maestro Eléctrico - Tablero de alumbrado y tomacorrientes [48 h]; Suministro: Tablero de alumbrado y tomacorrientes [1] |
| F402 | Tablero de fuerza motores | resources Mano de Obra [24 h]; Materiales [1] → Maestro Eléctrico - Tablero de fuerza motores [24 h]; Suministro: Tablero de fuerza motores [1] |
| F403 | Canalización conduit EMT 3" para circuito principal | resources Mano de Obra [40 h]; Materiales [1] → Maestro Eléctrico - Canalización conduit EMT 3" para circuito principal [40 h]; Suministro: Canalización conduit EMT 3" para circuito principal [1] |
| F404 | Canalización conduit EMT 1" alumbrado | resources Mano de Obra [120 h]; Materiales [1] → Maestro Eléctrico - Canalización conduit EMT 1" alumbrado [120 h]; Suministro: Canalización conduit EMT 1" alumbrado [1] |
| F405 | Canalización conduit EMT 1/2" tomacorrientes | resources Mano de Obra [60 h]; Materiales [1] → Maestro Eléctrico - Canalización conduit EMT 1/2" tomacorrientes [60 h]; Suministro: Canalización conduit EMT 1/2" tomacorrientes [1] |
| F408 | Cable XLPE 3x2.5mm² alumbrado | resources Mano de Obra [120 h]; Materiales [1] → Maestro Eléctrico - Cable XLPE 3x2.5mm² alumbrado [120 h]; Suministro: Cable XLPE 3x2.5mm² alumbrado [1] |
| F406 | Cable poder 4x16mm² (alimentador principal) | resources Mano de Obra [30 h]; Materiales [1] → Maestro Eléctrico - Cable poder 4x16mm² (alimentador principal) [30 h]; Suministro: Cable poder 4x16mm² (alimentador principal) [1] |
| F407 | Cable XLPE 4x6mm² circuitos secundarios | resources Mano de Obra [120 h]; Materiales [1] → Maestro Eléctrico - Cable XLPE 4x6mm² circuitos secundarios [120 h]; Suministro: Cable XLPE 4x6mm² circuitos secundarios [1] |
| F410 | Luminaria LED fluorescente 2x36W oficinas | resources Mano de Obra [12 h]; Materiales [1] → Maestro Eléctrico - Luminaria LED fluorescente 2x36W oficinas [12 h]; Suministro: Luminaria LED fluorescente 2x36W oficinas [1] |
| F409 | Luminaria LED industrial highbay 200W UFO | resources Mano de Obra [80 h]; Materiales [1] → Maestro Eléctrico - Luminaria LED industrial highbay 200W UFO [80 h]; Suministro: Luminaria LED industrial highbay 200W UFO [1] |
| F411 | Luminaria exterior LED 150W con poste | resources Mano de Obra [18 h]; Materiales [1] → Maestro Eléctrico - Luminaria exterior LED 150W con poste [18 h]; Suministro: Luminaria exterior LED 150W con poste [1] |
| F412 | Interruptores, tomacorrientes y accesorios | resources Mano de Obra [24 h]; Materiales [1] → Maestro Eléctrico - Interruptores, tomacorrientes y accesorios [24 h]; Suministro: Interruptores, tomacorrientes y accesorios [1] |
| F413 | Sistema de puesta a tierra (red malla) | resources Mano de Obra [40 h]; Materiales [1] → Maestro Eléctrico - Sistema de puesta a tierra (red malla) [40 h]; Suministro: Sistema de puesta a tierra (red malla) [1] |
| F414 | Medición de resistencia de tierra (<5O) | resources Mano de Obra [4 h]; Materiales [1]; Maquinaria y Equipos [1 h] → Inspector Eléctrico (SEC) - Medición de resistencia de tierra (<5?) [4 h]; Suministro: Medición de resistencia de tierra (<5?) [1]; Telurímetro - Medición de resistencia de tierra (<5?) [1 h] |
| F416 | Generador de emergencia 50KVA (arriendo) | resources Mano de Obra [8 h]; Materiales [1]; Maquinaria y Equipos [1 h] → Maestro Eléctrico - Generador de emergencia 50KVA (arriendo) [8 h]; Suministro: Generador de emergencia 50KVA (arriendo) [1]; Generador 50KVA (arriendo) - Generador de emergencia 50KVA (arriendo) [1 h] |
| F415 | Sistema UPS oficina administración 3KVA | resources Mano de Obra [8 h]; Materiales [1]; Maquinaria y Equipos [1 h] → Maestro Eléctrico - Sistema UPS oficina administración 3KVA [8 h]; Suministro: Sistema UPS oficina administración 3KVA [1]; Equipos y herramientas menores - Sistema UPS oficina administración 3KVA [1 h] |
| F417 | Revisión SEC y emisión informe | resources Mano de Obra [16 h]; Materiales [1] → Inspector Eléctrico (SEC) - Revisión SEC y emisión informe [16 h]; Suministro: Revisión SEC y emisión informe [1] |
| F418 | Red AP enterrada PVC PN10 ø63mm | resources Mano de Obra [30 h]; Materiales [1] → Maestro Gasfíter / Sanitario - Red AP enterrada PVC PN10 ø63mm [30 h]; Suministro: Red AP enterrada PVC PN10 ø63mm [1] |
| F419 | Red AP interior PVC PN10 ø25mm | resources Mano de Obra [12 h]; Materiales [1] → Maestro Gasfíter / Sanitario - Red AP interior PVC PN10 ø25mm [12 h]; Suministro: Red AP interior PVC PN10 ø25mm [1] |
| F420 | Artefactos sanitarios (WC+lavamanos+urinario) | resources Mano de Obra [32 h]; Materiales [1] → Maestro Gasfíter / Sanitario - Artefactos sanitarios (WC+lavamanos+urinario) [32 h]; Suministro: Artefactos sanitarios (WC+lavamanos+urinario) [1] |
| F421 | Instalación duchas SSHH personal | resources Mano de Obra [24 h]; Materiales [1] → Maestro Gasfíter / Sanitario - Instalación duchas SSHH personal [24 h]; Suministro: Instalación duchas SSHH personal [1] |
| F423 | Red alcantarillado exterior PVC ø160mm | resources Mano de Obra [48 h]; Materiales [1] → Maestro Gasfíter / Sanitario - Red alcantarillado exterior PVC ø160mm [48 h]; Suministro: Red alcantarillado exterior PVC ø160mm [1] |
| F424 | Cámara de inspección aguas servidas | resources Mano de Obra [32 h]; Materiales [1] → Maestro Gasfíter / Sanitario - Cámara de inspección aguas servidas [32 h]; Suministro: Cámara de inspección aguas servidas [1] |
| F425 | Trampa de grasas | resources Mano de Obra [8 h]; Materiales [1] → Maestro Gasfíter / Sanitario - Trampa de grasas [8 h]; Suministro: Trampa de grasas [1] |
| F422 | Red alcantarillado interior PVC ø110mm | resources Mano de Obra [48 h]; Materiales [1] → Maestro Gasfíter / Sanitario - Red alcantarillado interior PVC ø110mm [48 h]; Suministro: Red alcantarillado interior PVC ø110mm [1] |

| ID | Task | Other |
| --- | --- | --- |
| F426 | Instalación calefón 10L gas licuado | resources Mano de Obra [6 h]; Materiales [1] → Maestro Gasfíter / Sanitario - Instalación calefón 10L gas licuado [6 h]; Suministro: Instalación calefón 10L gas licuado [1] |
| F427 | Construcción SSHH + caseta prefabricada 15m² | resources Mano de Obra [120 h]; Materiales [1] → Maestro Gasfíter / Sanitario - Construcción SSHH + caseta prefabricada 15m² [120 h]; Suministro: Construcción SSHH + caseta prefabricada 15m² [1] |
| F428 | Red húmeda rociadores NFPA-13 ø63mm | resources Mano de Obra [320 h]; Materiales [1] → Instalador Protección Contra Incendio - Red húmeda rociadores NFPA-13 ø63mm [320 h]; Suministro: Red húmeda rociadores NFPA-13 ø63mm [1] |
| F429 | Rociadores automáticos estándar 68°C | resources Mano de Obra [80 h]; Materiales [1]; Maquinaria y Equipos [1 h] → Instalador Protección Contra Incendio - Rociadores automáticos estándar 68°C [80 h]; Suministro: Rociadores automáticos estándar 68°C [1]; Equipo de prueba hidráulica - Rociadores automáticos estándar 68°C [1 h] |
| F430 | Central de detección incendio 8 zonas | resources Mano de Obra [16 h]; Materiales [1]; Maquinaria y Equipos [1 h] → Instalador Protección Contra Incendio - Central de detección incendio 8 zonas [16 h]; Suministro: Central de detección incendio 8 zonas [1]; Instrumental de comisionamiento - Central de detección incendio 8 zonas [1 h] |
| F433 | Pulsadores manuales de alarma | resources Mano de Obra [3 h]; Materiales [1] → Instalador Protección Contra Incendio - Pulsadores manuales de alarma [3 h]; Suministro: Pulsadores manuales de alarma [1] |
| F434 | Sirenas estroboscópicas de alarma | resources Mano de Obra [3 h]; Materiales [1] → Instalador Protección Contra Incendio - Sirenas estroboscópicas de alarma [3 h]; Suministro: Sirenas estroboscópicas de alarma [1] |
| F431 | Detectores de humo fotoeléctricos | resources Mano de Obra [20 h]; Materiales [1]; Maquinaria y Equipos [1 h] → Instalador Protección Contra Incendio - Detectores de humo fotoeléctricos [20 h]; Suministro: Detectores de humo fotoeléctricos [1]; Instrumental de comisionamiento - Detectores de humo fotoeléctricos [1 h] |
| F432 | Detectores temperatura 58°C | resources Mano de Obra [12 h]; Materiales [1]; Maquinaria y Equipos [1 h] → Instalador Protección Contra Incendio - Detectores temperatura 58°C [12 h]; Suministro: Detectores temperatura 58°C [1]; Instrumental de comisionamiento - Detectores temperatura 58°C [1 h] |
| F437 | Estanque de reserva agua CI 20m³ | resources Mano de Obra [24 h]; Materiales [1] → Instalador Protección Contra Incendio - Estanque de reserva agua CI 20m³ [24 h]; Suministro: Estanque de reserva agua CI 20m³ [1] |
| F438 | Grupo de presión CI motor-bomba 30HP | resources Mano de Obra [16 h]; Materiales [1]; Maquinaria y Equipos [1 h] → Instalador Protección Contra Incendio - Grupo de presión CI motor-bomba 30HP [16 h]; Suministro: Grupo de presión CI motor-bomba 30HP [1]; Equipos y herramientas menores - Grupo de presión CI motor-bomba 30HP [1 h] |
| F436 | Extintores PQS 12kg ABC | resources Mano de Obra [10 h]; Materiales [1] → Instalador Protección Contra Incendio - Extintores PQS 12kg ABC [10 h]; Suministro: Extintores PQS 12kg ABC [1] |
| F435 | Gabinetes contra incendio 1.5" completos | resources Mano de Obra [16 h]; Materiales [1] → Instalador Protección Contra Incendio - Gabinetes contra incendio 1.5" completos [16 h]; Suministro: Gabinetes contra incendio 1.5" completos [1] |
| F439 | Prueba hidráulica red CI (1.5x presión trabajo) | resources Mano de Obra [8 h]; Materiales [1]; Maquinaria y Equipos [1 h] → Instalador Protección Contra Incendio - Prueba hidráulica red CI (1.5x presión trabajo) [8 h]; Suministro: Prueba hidráulica red CI (1.5x presión trabajo) [1]; Equipo de prueba hidráulica (bomba) - Prueba hidráulica red CI (1.5x presión trabajo) [1 h] |
| F443 | Rejillas de admisión aire fresco fachada | resources Mano de Obra [12 h]; Materiales [1] → Instalador de Ventilación/Climatización - Rejillas de admisión aire fresco fachada [12 h]; Suministro: Rejillas de admisión aire fresco fachada [1] |
| F440 | Extractor industrial axial 15.000m³/h | resources Mano de Obra [48 h]; Materiales [1]; Maquinaria y Equipos [1 h] → Instalador de Ventilación/Climatización - Extractor industrial axial 15.000m³/h [48 h]; Suministro: Extractor industrial axial 15.000m³/h [1]; Plataforma elevadora / izaje - Extractor industrial axial 15.000m³/h [1 h] |
| F441 | Ventiladores de inyección 8.000m³/h | resources Mano de Obra [24 h]; Materiales [1]; Maquinaria y Equipos [1 h] → Instalador de Ventilación/Climatización - Ventiladores de inyección 8.000m³/h [24 h]; Suministro: Ventiladores de inyección 8.000m³/h [1]; Plataforma elevadora / izaje - Ventiladores de inyección 8.000m³/h [1 h] |
| F442 | Ductos metálicos galvanizados ventilación | resources Mano de Obra [120 h]; Materiales [1] → Instalador de Ventilación/Climatización - Ductos metálicos galvanizados ventilación [120 h]; Suministro: Ductos metálicos galvanizados ventilación [1] |
| F444 | Control automático ventilación (termostato) | resources Mano de Obra [8 h]; Materiales [1] → Instalador de Ventilación/Climatización - Control automático ventilación (termostato) [8 h]; Suministro: Control automático ventilación (termostato) [1] |
| F445 | Sistema extracción gases batería carga montacarga | resources Mano de Obra [16 h]; Materiales [1] → Instalador de Ventilación/Climatización - Sistema extracción gases batería carga montacarga [16 h]; Suministro: Sistema extracción gases batería carga montacarga [1] |
| F447 | Pruebas y comisionamiento SSHH | resources Mano de Obra [16 h]; Materiales [1] → Maestro Gasfíter / Sanitario - Pruebas y comisionamiento SSHH [16 h]; Suministro: Pruebas y comisionamiento SSHH [1] |
| F446 | Pruebas y comisionamiento instalaciones EE | resources Mano de Obra [24 h]; Materiales [1] → Especialista en Comisionamiento - Pruebas y comisionamiento instalaciones EE [24 h]; Suministro: Pruebas y comisionamiento instalaciones EE [1] |
| F448 | Planos as-built instalaciones | resources Mano de Obra [8 h]; Materiales [1] → Proyectista (As-Built) - Planos as-built instalaciones [8 h]; Suministro: Planos as-built instalaciones [1] |
| F449 | Informe final de instalaciones y ensayos | resources Mano de Obra [8 h]; Materiales [1] → Proyectista (As-Built) - Informe final de instalaciones y ensayos [8 h]; Suministro: Informe final de instalaciones y ensayos [1] |
| F500 | Estantería metálica pesada 5 niveles 1000kg/niv | resources Mano de Obra [240 h]; Materiales [1] → Instalador de Estanterías (Racks) - Estantería metálica pesada 5 niveles 1000kg/niv [240 h]; Suministro: Estantería metálica pesada 5 niveles 1000kg/niv [1] |
| F502 | Estantería para neumáticos y partes largas | resources Mano de Obra [40 h]; Materiales [1] → Instalador de Estanterías (Racks) - Estantería para neumáticos y partes largas [40 h]; Suministro: Estantería para neumáticos y partes largas [1] |
| F501 | Estantería metálica mediana 3 niveles 500kg/niv | resources Mano de Obra [120 h]; Materiales [1] → Instalador de Estanterías (Racks) - Estantería metálica mediana 3 niveles 500kg/niv [120 h]; Suministro: Estantería metálica mediana 3 niveles 500kg/niv [1] |
| F504 | Casilleros personal (4 puertas) | resources Mano de Obra [8 h]; Materiales [1] → Cuadrilla Montaje Equipamiento - Casilleros personal (4 puertas) [8 h]; Suministro: Casilleros personal (4 puertas) [1] |
| F503 | Mesones metálicos de trabajo 200x80cm | resources Mano de Obra [18 h]; Materiales [1] → Cuadrilla Montaje Equipamiento - Mesones metálicos de trabajo 200x80cm [18 h]; Suministro: Mesones metálicos de trabajo 200x80cm [1] |
| F507 | Señalética de emergencia y evacuación | resources Mano de Obra [6 h]; Materiales [1] → Instalador de Señalética - Señalética de emergencia y evacuación [6 h]; Suministro: Señalética de emergencia y evacuación [1] |
| F505 | Señalética de seguridad vinilo reflectante | resources Mano de Obra [18 h]; Materiales [1] → Instalador de Señalética - Señalética de seguridad vinilo reflectante [18 h]; Suministro: Señalética de seguridad vinilo reflectante [1] |
| F508 | Pintura de señalética piso (vías tránsito) | resources Mano de Obra [45 h]; Materiales [1]; Maquinaria y Equipos [1 h] → Pintor (Demarcación) - Pintura de señalética piso (vías tránsito) [45 h]; Suministro: Pintura de señalética piso (vías tránsito) [1]; Equipo airless + andamios - Pintura de señalética piso (vías tránsito) [1 h] |
| F506 | Señalética de almacenamiento y zonas | resources Mano de Obra [10 h]; Materiales [1] → Instalador de Señalética - Señalética de almacenamiento y zonas [10 h]; Suministro: Señalética de almacenamiento y zonas [1] |
| F510 | Cámaras CCTV exterior PTZ 4K | resources Mano de Obra [16 h]; Materiales [1] → Técnico en Electrónica/CCTV - Cámaras CCTV exterior PTZ 4K [16 h]; Suministro: Cámaras CCTV exterior PTZ 4K [1] |
| F509 | Cámaras CCTV domo 4K interior | resources Mano de Obra [24 h]; Materiales [1] → Técnico en Electrónica/CCTV - Cámaras CCTV domo 4K interior [24 h]; Suministro: Cámaras CCTV domo 4K interior [1] |
| F511 | DVR 16 canales 4K + disco 8TB | resources Mano de Obra [4 h]; Materiales [1] → Técnico en Electrónica/CCTV - DVR 16 canales 4K + disco 8TB [4 h]; Suministro: DVR 16 canales 4K + disco 8TB [1] |
| F512 | Monitor 55" sala de control | resources Mano de Obra [2 h]; Materiales [1] → Técnico en Electrónica/CCTV - Monitor 55" sala de control [2 h]; Suministro: Monitor 55" sala de control [1] |
| F515 | Barrera vehicular automática | resources Mano de Obra [12 h]; Materiales [1] → Técnico en Electrónica/Seguridad - Barrera vehicular automática [12 h]; Suministro: Barrera vehicular automática [1] |
| F513 | Sistema control de acceso biométrico | resources Mano de Obra [24 h]; Materiales [1] → Técnico en Electrónica/Seguridad - Sistema control de acceso biométrico [24 h]; Suministro: Sistema control de acceso biométrico [1] |
| F514 | Torniquete de acceso peatonal | resources Mano de Obra [8 h]; Materiales [1] → Técnico en Electrónica/Seguridad - Torniquete de acceso peatonal [8 h]; Suministro: Torniquete de acceso peatonal [1] |
| F516 | Mobiliario oficina bodegaje (escritorios+sillas) | resources Mano de Obra [8 h]; Materiales [1] → Cuadrilla Montaje Equipamiento - Mobiliario oficina bodegaje (escritorios+sillas) [8 h]; Suministro: Mobiliario oficina bodegaje (escritorios+sillas) [1] |
| F517 | Computadores gestión bodega (3 equipos) | resources Mano de Obra [10 h]; Materiales [1] → Técnico en Redes/TI - Computadores gestión bodega (3 equipos) [10 h]; Suministro: Computadores gestión bodega (3 equipos) [1] |
| F518 | Impresora código de barras + lectores | resources Mano de Obra [6 h]; Materiales [1] → Técnico en Redes/TI - Impresora código de barras + lectores [6 h]; Suministro: Impresora código de barras + lectores [1] |
| F519 | Instalación sistema WiFi industrial | resources Mano de Obra [12 h]; Materiales [1] → Técnico en Redes/TI - Instalación sistema WiFi industrial [12 h]; Suministro: Instalación sistema WiFi industrial [1] |
| F520 | Pintura interior muros SSHH | resources Mano de Obra [24 h]; Materiales [1]; Maquinaria y Equipos [1 h] → Pintor - Pintura interior muros SSHH [24 h]; Suministro: Pintura interior muros SSHH [1]; Equipo airless + andamios - Pintura interior muros SSHH [1 h] |
| F521 | Revestimiento cerámico SSHH | resources Mano de Obra [48 h]; Materiales [1] → Maestro Ceramista - Revestimiento cerámico SSHH [48 h]; Suministro: Revestimiento cerámico SSHH [1] |
| F522 | Cielo falso planchas yeso-cartón oficinas | resources Mano de Obra [45 h]; Materiales [1] → Instalador de Cielos - Cielo falso planchas yeso-cartón oficinas [45 h]; Suministro: Cielo falso planchas yeso-cartón oficinas [1] |
| F523 | Limpieza general de obra | resources Mano de Obra [24 h]; Materiales [1] → Cuadrilla de Aseo y Cierre - Limpieza general de obra [24 h]; Suministro: Limpieza general de obra [1] |
| F524 | Retiro de instalaciones de faenas | resources Mano de Obra [16 h]; Materiales [1] → Cuadrilla de Aseo y Cierre - Retiro de instalaciones de faenas [16 h]; Suministro: Retiro de instalaciones de faenas [1] |
| F600 | Dirección de proyecto (DP) — mensual | resources Mano de Obra [640 h] → Director de Proyecto - Dirección de proyecto (DP) - mensual [640 h] |
| F601 | Administración de contratos | resources Mano de Obra [320 h] → Administrador de Contrato - Administración de contratos [320 h] |
| F602 | Gestión de calidad (inspecciones + libros) | resources Mano de Obra [320 h] → Jefe de Calidad (QA/QC) - Gestión de calidad (inspecciones + libros) [320 h] |
| F603 | Prevención de riesgos en obra | resources Mano de Obra [704 h] → Experto en Prevención de Riesgos - Prevención de riesgos en obra [704 h] |
| F604 | Informes de avance mensuales al cliente | resources Mano de Obra [32 h]; Materiales [1] → Profesional de Control de Proyecto - Informes de avance mensuales al cliente [32 h]; Suministro: Informes de avance mensuales al cliente [1] |
| F605 | Reuniones de coordinación semanal | resources Mano de Obra [51 h]; Materiales [1] → Jefe de Terreno - Reuniones de coordinación semanal [51 h]; Suministro: Reuniones de coordinación semanal [1] |
| F606 | Control de costos y EVM mensual | resources Mano de Obra [160 h] → Profesional de Control de Proyecto - Control de costos y EVM mensual [160 h] |
| F607 | Tramitación recepción definitiva DOM | resources Mano de Obra [16 h]; Materiales [1] → Profesional de Cierre - Tramitación recepción definitiva DOM [16 h]; Suministro: Tramitación recepción definitiva DOM [1] |
| F608 | Entrega dossier técnico final | resources Mano de Obra [25 h]; Materiales [1] → Profesional de Cierre - Entrega dossier técnico final [25 h]; Suministro: Entrega dossier técnico final [1] |
| F609 | Acta de entrega y recepción conforme | resources Mano de Obra [8 h]; Materiales [1] → Profesional de Cierre - Acta de entrega y recepción conforme [8 h]; Suministro: Acta de entrega y recepción conforme [1] |

## Version 4 (data date 2026-09-07, saved 2026-06-24)

Note of the change: Corrige nombres de recursos con simbolo de pulgada e incluye precios en tarifas

Last finish stays 2027-03-03.

Changed:

| ID | Task | Other |
| --- | --- | --- |
| F403 | Canalización conduit EMT 3" para circuito principal | resources Maestro Eléctrico - Canalización conduit EMT 3" para circuito principal [40 h]; Suministro: Canalización conduit EMT 3" para circuito principal [1] → Maestro Eléctrico - Canalización conduit EMT 3 pulg para circuito principal [40 h]; Suministro: Canalización conduit EMT 3 pulg para circuito principal [1] |
| F404 | Canalización conduit EMT 1" alumbrado | resources Maestro Eléctrico - Canalización conduit EMT 1" alumbrado [120 h]; Suministro: Canalización conduit EMT 1" alumbrado [1] → Maestro Eléctrico - Canalización conduit EMT 1 pulg alumbrado [120 h]; Suministro: Canalización conduit EMT 1 pulg alumbrado [1] |
| F405 | Canalización conduit EMT 1/2" tomacorrientes | resources Maestro Eléctrico - Canalización conduit EMT 1/2" tomacorrientes [60 h]; Suministro: Canalización conduit EMT 1/2" tomacorrientes [1] → Maestro Eléctrico - Canalización conduit EMT 1/2 pulg tomacorrientes [60 h]; Suministro: Canalización conduit EMT 1/2 pulg tomacorrientes [1] |
| F435 | Gabinetes contra incendio 1.5" completos | resources Instalador Protección Contra Incendio - Gabinetes contra incendio 1.5" completos [16 h]; Suministro: Gabinetes contra incendio 1.5" completos [1] → Instalador Protección Contra Incendio - Gabinetes contra incendio 1.5 pulg completos [16 h]; Suministro: Gabinetes contra incendio 1.5 pulg completos [1] |
| F512 | Monitor 55" sala de control | resources Técnico en Electrónica/CCTV - Monitor 55" sala de control [2 h]; Suministro: Monitor 55" sala de control [1] → Técnico en Electrónica/CCTV - Monitor 55 pulg sala de control [2 h]; Suministro: Monitor 55 pulg sala de control [1] |
